# Vendor Evaluation Dashboard V2_Plan

Schedule from MS Project, 2025-04-15 to 2025-09-03, status date 2025-07-01, A marks actual dates.

## Calendars

- Standard: Mon-Fri 08:00-12:00, 13:00-17:00; Sat-Sun off. Exceptions (off unless hours are given): 2025-05-01 (วันแรงงานแห่งชาติ), 2025-05-04 (วันฉัตรมงคล), 2025-05-11 to 2025-05-12 (วันวิสาขบูชา), 2025-06-03 (วันเฉลิมพระชนมพรรษา สมเด็จพระนางเจ้าสุทิดา), 2025-07-10 (วันอาสาฬหบูชา), 2025-07-28 (วันเฉลิมพระชนมพรรษาพระบาทสมเด็จพระเจ้าอยู่หัว), 2025-08-12 (วันแม่แห่งชาติ).

## Resources

| Resource | Group |
| --- | --- |
| Aunchala Kengkarunkij | Procurement - Process Compliance & Tran. |
| Chakhrit Kru-Usaha | Business Intelligent |
| Junjeera Muanbida | Business Process Management Dept. |
| Krittalak Kaewnissai | Business Process Management Dept. |
| Pornpun Panyapong | Business Intelligent |
| Sutripat Ngamjittrong |  |
| Tanchanok Sunsurat | Procurement - Process Compliance & Tran. |
| Taravit Sinpreedee | Business Process Management Dept. |

## Schedule

| ID | WBS | Task | Type | Duration | Start | Finish | Predecessors | Complete | Remaining | Total slack | Constraint | Resources | Work | Actual work |
| --- | --- | --- | --- | --- | --- | --- | --- | --- | --- | --- | --- | --- | --- | --- |
| 1 | 1 | **Milestones** |  | 84d | 2025-04-30 A | 2025-09-03 |  |  | 84d | 0d |  |  |  |  |
| 2 | 1.1 | เสนอ Project Charter ให้ผู้บริหารอนุมัติ (Milestone #1) | milestone | 0d | 2025-04-30 A | 2025-04-30 A | 15 | 100% |  |  |  |  |  |  |
| 3 | 1.2 | ประชุม Kick off โครงการ เพื่อสื่อสารแผนงานโครงการ (Milestone #2) | milestone | 0d | 2025-05-02 A | 2025-05-02 A | 16 | 100% |  |  |  |  |  |  |
| 4 | 1.3 | อนุมัติและยืนยัน Requirement Specification (Milestone #3) | milestone | 0d | 2025-05-14 A | 2025-05-14 A | 51 | 100% |  |  |  |  |  |  |
| 5 | 1.4 | อนุมัติและยืนยัน Data Retention Sign-Off Form (Milestone #4) | milestone | 0d | 2025-05-15 A | 2025-05-15 A | 53 | 100% |  |  |  |  |  |  |
| 6 | 1.5 | ส่งมอบเอกสาร Business process risk management และเอกสารที่เกี่ยวข้อง (Milestone #5) | milestone | 0d | 2025-06-09 A | 2025-06-09 A | 60 | 100% |  |  |  |  |  |  |
| 7 | 1.6 | อนุมัติและยืนยัน Design Specification (Milestone #6) | milestone | 0d | 2025-06-09 A | 2025-06-09 A | 86 | 100% |  |  |  |  |  |  |
| 8 | 1.7 | ส่งมอบBPM Sign-off Draft Process Flow และเอกสารที่เกี่ยวข้อง (Milestone #7) | milestone | 0d | 2025-07-16 | 2025-07-16 | 185 |  |  | 33d |  |  |  |  |
| 9 | 1.8 | ส่งมอบระบบงานที่พัฒนาเรียบร้อยแล้ว (Milestone #8) | milestone | 0d | 2025-07-17 | 2025-07-17 | 186 |  |  | 32d |  |  |  |  |
| 10 | 1.9 | UAT Sign-off (Milestone #9) | milestone | 0d | 2025-08-01 | 2025-08-01 | 192 |  |  | 22d |  |  |  |  |
| 11 | 1.10 | ดำเนินการ Go-Live(Milestone #10) | milestone | 0d | 2025-08-06 | 2025-08-06 | 196 |  |  | 19d |  |  |  |  |
| 12 | 1.11 | ดำเนินการปิดโครงการ (Milestone #11) | milestone | 0d | 2025-09-03 | 2025-09-03 | 205 |  |  | 0d |  |  |  |  |
| 13 | 2 | **Project Preparation** |  | 13d | 2025-04-15 A | 2025-05-02 A |  | 100% |  |  |  |  | 208h | 208h |
| 14 | 2.1 | จัดทำ Project Charter |  | 11d | 2025-04-15 A | 2025-04-29 A |  | 100% |  |  |  | Aunchala Kengkarunkij; Sutripat Ngamjittrong | 176h | 176h |
| 15 | 2.2 | เสนอ Project Charter ให้ผู้บริหารอนุมัติ (Milestone #1) |  | 1d | 2025-04-30 A | 2025-04-30 A | 14 | 100% |  |  |  | Aunchala Kengkarunkij; Sutripat Ngamjittrong | 16h | 16h |
| 16 | 2.3 | ประชุม Kick off โครงการ เพื่อสื่อสารแผนงานโครงการ (Milestone #2) |  | 1d | 2025-05-02 A | 2025-05-02 A | 15 | 100% |  |  |  | Aunchala Kengkarunkij; Sutripat Ngamjittrong | 16h | 16h |
| 17 | 3 | **ประชุมติดตามความคืบหน้าของโครงการ (Weekly)** |  | 90d | 2025-04-16 A | 2025-08-27 |  | 55% | 40.5d | 5d |  |  |  |  |
| 18 | 3.1 | ประชุมติดตามความคืบหน้าของโครงการ (Weekly) 1 |  | 1d | 2025-04-16 A | 2025-04-16 A |  | 100% |  |  | start no earlier than 2025-04-16 |  |  |  |
| 19 | 3.2 | ประชุมติดตามความคืบหน้าของโครงการ (Weekly) 2 |  | 1d | 2025-04-23 A | 2025-04-23 A |  | 100% |  |  | start no earlier than 2025-04-23 |  |  |  |
| 20 | 3.3 | ประชุมติดตามความคืบหน้าของโครงการ (Weekly) 3 |  | 1d | 2025-04-30 A | 2025-04-30 A |  | 100% |  |  | start no earlier than 2025-04-30 |  |  |  |
| 21 | 3.4 | ประชุมติดตามความคืบหน้าของโครงการ (Weekly) 4 |  | 1d | 2025-05-07 A | 2025-05-07 A |  | 100% |  |  | start no earlier than 2025-05-07 |  |  |  |
| 22 | 3.5 | ประชุมติดตามความคืบหน้าของโครงการ (Weekly) 5 |  | 1d | 2025-05-14 A | 2025-05-14 A |  | 100% |  |  | start no earlier than 2025-05-14 |  |  |  |
| 23 | 3.6 | ประชุมติดตามความคืบหน้าของโครงการ (Weekly) 6 |  | 1d | 2025-05-21 A | 2025-05-21 A |  | 100% |  |  | start no earlier than 2025-05-21 |  |  |  |
| 24 | 3.7 | ประชุมติดตามความคืบหน้าของโครงการ (Weekly) 7 |  | 1d | 2025-05-28 A | 2025-05-28 A |  | 100% |  |  | start no earlier than 2025-05-28 |  |  |  |
| 25 | 3.8 | ประชุมติดตามความคืบหน้าของโครงการ (Weekly) 8 |  | 1d | 2025-06-04 A | 2025-06-04 A |  | 100% |  |  | start no earlier than 2025-06-04 |  |  |  |
| 26 | 3.9 | ประชุมติดตามความคืบหน้าของโครงการ (Weekly) 9 |  | 1d | 2025-06-11 A | 2025-06-11 A |  | 100% |  |  | start no earlier than 2025-06-11 |  |  |  |
| 27 | 3.10 | ประชุมติดตามความคืบหน้าของโครงการ (Weekly) 10 |  | 1d | 2025-06-18 A | 2025-06-18 A |  | 100% |  |  | start no earlier than 2025-06-18 |  |  |  |
| 28 | 3.11 | ประชุมติดตามความคืบหน้าของโครงการ (Weekly) 11 |  | 1d | 2025-06-25 A | 2025-06-25 A |  | 100% |  |  | start no earlier than 2025-06-25 |  |  |  |
| 29 | 3.12 | ประชุมติดตามความคืบหน้าของโครงการ (Weekly) 12 |  | 1d | 2025-07-02 | 2025-07-02 |  |  |  | 42d | start no earlier than 2025-07-02 |  |  |  |
| 30 | 3.13 | ประชุมติดตามความคืบหน้าของโครงการ (Weekly) 13 |  | 1d | 2025-07-09 | 2025-07-09 |  |  |  | 37d | start no earlier than 2025-07-09 |  |  |  |
| 31 | 3.14 | ประชุมติดตามความคืบหน้าของโครงการ (Weekly) 14 |  | 1d | 2025-07-16 | 2025-07-16 |  |  |  | 33d | start no earlier than 2025-07-16 |  |  |  |
| 32 | 3.15 | ประชุมติดตามความคืบหน้าของโครงการ (Weekly) 15 |  | 1d | 2025-07-23 | 2025-07-23 |  |  |  | 28d | start no earlier than 2025-07-23 |  |  |  |
| 33 | 3.16 | ประชุมติดตามความคืบหน้าของโครงการ (Weekly) 16 |  | 1d | 2025-07-30 | 2025-07-30 |  |  |  | 24d | start no earlier than 2025-07-30 |  |  |  |
| 34 | 3.17 | ประชุมติดตามความคืบหน้าของโครงการ (Weekly) 17 |  | 1d | 2025-08-06 | 2025-08-06 |  |  |  | 19d | start no earlier than 2025-08-06 |  |  |  |
| 35 | 3.18 | ประชุมติดตามความคืบหน้าของโครงการ (Weekly) 18 |  | 1d | 2025-08-13 | 2025-08-13 |  |  |  | 15d | start no earlier than 2025-08-13 |  |  |  |
| 36 | 3.19 | ประชุมติดตามความคืบหน้าของโครงการ (Weekly) 19 |  | 1d | 2025-08-20 | 2025-08-20 |  |  |  | 10d | start no earlier than 2025-08-20 |  |  |  |
| 37 | 3.20 | ประชุมติดตามความคืบหน้าของโครงการ (Weekly) 20 |  | 1d | 2025-08-27 | 2025-08-27 |  |  |  | 5d | start no earlier than 2025-08-27 |  |  |  |

| ID | WBS | Task | Duration | Start | Finish | Predecessors | Complete | Remaining | Total slack | Constraint | Resources | Work | Actual work |
| --- | --- | --- | --- | --- | --- | --- | --- | --- | --- | --- | --- | --- | --- |
| 38 | 4 | **รายงานความคืบหน้าของโครงการใน Tech.PMO (Monthly)** | 85d | 2025-04-25 A | 2025-08-29 |  | 60% | 34d | 3d |  |  |  |  |
| 39 | 4.1 | รายงานความคืบหน้าของโครงการใน Tech.PMO (Monthly) 1 | 1d | 2025-04-25 A | 2025-04-25 A |  | 100% |  |  | start no earlier than 2025-04-25 |  |  |  |
| 40 | 4.2 | รายงานความคืบหน้าของโครงการใน Tech.PMO (Monthly) 2 | 1d | 2025-05-30 A | 2025-05-30 A |  | 100% |  |  | start no earlier than 2025-05-30 |  |  |  |
| 41 | 4.3 | รายงานความคืบหน้าของโครงการใน Tech.PMO (Monthly) 3 | 1d | 2025-06-27 A | 2025-06-27 A |  | 100% |  |  | start no earlier than 2025-06-27 |  |  |  |
| 42 | 4.4 | รายงานความคืบหน้าของโครงการใน Tech.PMO (Monthly) 4 | 1d | 2025-07-25 | 2025-07-25 |  |  |  | 26d | start no earlier than 2025-07-25 |  |  |  |
| 43 | 4.5 | รายงานความคืบหน้าของโครงการใน Tech.PMO (Monthly) 5 | 1d | 2025-08-29 | 2025-08-29 |  |  |  | 3d | start no earlier than 2025-08-29 |  |  |  |
| 44 | 5 | **Requirement Gathering** | 7d | 2025-05-06 A | 2025-05-15 A |  | 100% |  |  |  |  | 272h | 272h |
| 45 | 5.1 | ศึกษากระบวนการทำงานในปัจจุบัน (As Is) | 2d | 2025-05-06 A | 2025-05-07 A | 16FS+1d | 100% |  |  |  | Aunchala Kengkarunkij; Sutripat Ngamjittrong | 32h | 32h |
| 46 | 5.2 | ศึกษาปัญหาของการทำงานในปัจจุบัน | 2d | 2025-05-06 A | 2025-05-07 A | 45SS | 100% |  |  |  | Aunchala Kengkarunkij; Sutripat Ngamjittrong | 32h | 32h |
| 47 | 5.3 | จัดประชุมสัมภาษณ์ตัวแทนผู้ปฏิบัติงานเพื่อค้นหาความต้องการ (Interview Key Users) | 2d | 2025-05-06 A | 2025-05-07 A | 45SS | 100% |  |  |  | Aunchala Kengkarunkij; Chakhrit Kru-Usaha; Pornpun Panyapong; Sutripat Ngamjittrong; Tanchanok Sunsurat | 80h | 80h |
| 48 | 5.4 | สรุปจัดทำรายละเอียดความต้องการ (Develop Requirement Specification) | 1d | 2025-05-08 A | 2025-05-08 A | 47 | 100% |  |  |  | Aunchala Kengkarunkij; Sutripat Ngamjittrong | 16h | 16h |
| 49 | 5.5 | ประชุมกับ User เพื่อสรุปยืนยัน Requirement | 1d | 2025-05-09 A | 2025-05-09 A | 48 | 100% |  |  |  | Aunchala Kengkarunkij; Chakhrit Kru-Usaha; Pornpun Panyapong; Sutripat Ngamjittrong; Tanchanok Sunsurat | 40h | 40h |
| 50 | 5.6 | แก้ไขเอกสาร Requirement Specification #ครั้งที่ 1 | 1d | 2025-05-13 A | 2025-05-13 A | 49 | 100% |  |  |  | Aunchala Kengkarunkij; Sutripat Ngamjittrong | 16h | 16h |
| 51 | 5.7 | อนุมัติและยืนยัน Requirement Specification (Milestone #3) | 1d | 2025-05-14 A | 2025-05-14 A | 50 | 100% |  |  |  | Aunchala Kengkarunkij | 8h | 8h |
| 52 | 5.8 | กำหนดระยะเวลาการเก็บรักษาข้อมูล (Data Retention) | 1d | 2025-05-14 A | 2025-05-14 A | 51SS | 100% |  |  |  | Aunchala Kengkarunkij; Chakhrit Kru-Usaha; Sutripat Ngamjittrong; Tanchanok Sunsurat; Pornpun Panyapong | 40h | 40h |
| 53 | 5.9 | อนุมัติและยืนยัน Data Retention Sign-Off Form (Milestone #4) | 1d | 2025-05-15 A | 2025-05-15 A | 52 | 100% |  |  |  | Aunchala Kengkarunkij | 8h | 8h |
| 54 | 6 | **Design** | 16d | 2025-05-16 A | 2025-06-09 A |  | 100% |  |  |  |  | 672h | 672h |
| 55 | 6.1 | ออกแบบสถาปัตยกรรมระบบ (Solution Architecture) | 4d | 2025-05-16 A | 2025-05-21 A | 53 | 100% |  |  |  | Sutripat Ngamjittrong | 32h | 32h |
| 56 | 6.2 | ออกแบบ Data Flow ของระบบงาน | 3d | 2025-05-22 A | 2025-05-26 A | 55 | 100% |  |  |  | Sutripat Ngamjittrong | 24h | 24h |
| 57 | 6.3 | ออกแบบโครงสร้างฐานข้อมูล (DB Structure and Schema) | 7d | 2025-05-22 A | 2025-05-30 A | 55 | 100% |  |  |  | Sutripat Ngamjittrong | 56h | 56h |
| 58 | 6.4 | Business process management and Business process risk management training for User | 2d | 2025-05-19 A | 2025-05-20 A | 53FS+1d | 100% |  |  |  | Aunchala Kengkarunkij; Krittalak Kaewnissai; Tanchanok Sunsurat | 48h | 48h |
| 59 | 6.5 | จัดทำเอกสาร Business process risk management | 12d | 2025-05-21 A | 2025-06-06 A | 58 | 100% |  |  |  | Aunchala Kengkarunkij; Tanchanok Sunsurat | 192h | 192h |
| 60 | 6.6 | ส่งมอบเอกสาร Business process risk management และเอกสารที่เกี่ยวข้อง (Milestone #5) | 1d | 2025-06-09 A | 2025-06-09 A | 59 | 100% |  |  |  | Aunchala Kengkarunkij; Tanchanok Sunsurat | 16h | 16h |
| 61 | 6.7 | **กลุ่มงาน IT** | 1d | 2025-05-28 A | 2025-05-28 A |  | 100% |  |  |  |  | 16h | 16h |
| 62 | 6.7.1 | ออกแบบแบบฟอร์มการประเมินคุณภาพการส่งมอบสินค้า/บริการ (For IT User) | 1d | 2025-05-28 A | 2025-05-28 A | 53FS+8d | 100% |  |  |  | Aunchala Kengkarunkij; Tanchanok Sunsurat | 16h | 16h |

| ID | WBS | Task | Duration | Start | Finish | Predecessors | Complete | Resources | Work | Actual work |
| --- | --- | --- | --- | --- | --- | --- | --- | --- | --- | --- |
| 63 | 6.8 | **กลุ่มงาน WASTE** | 1d | 2025-05-28 A | 2025-05-28 A |  | 100% |  | 16h | 16h |
| 64 | 6.8.1 | ออกแบบแบบฟอร์มการประเมินคุณภาพการส่งมอบสินค้า/บริการ WASTE | 1d | 2025-05-28 A | 2025-05-28 A | 62SS | 100% | Aunchala Kengkarunkij; Tanchanok Sunsurat | 16h | 16h |
| 65 | 6.9 | **กลุ่มงาน Logistic** | 1d | 2025-05-28 A | 2025-05-28 A |  | 100% |  | 16h | 16h |
| 66 | 6.9.1 | ออกแบบแบบฟอร์มการประเมินคุณภาพการส่งมอบสินค้า/บริการ Vendor-N (G.Logistics) | 1d | 2025-05-28 A | 2025-05-28 A | 62SS | 100% | Aunchala Kengkarunkij; Tanchanok Sunsurat | 16h | 16h |
| 67 | 6.10 | **กลุ่มงาน Manufacturing** | 1d | 2025-05-28 A | 2025-05-28 A |  | 100% |  | 16h | 16h |
| 68 | 6.10.1 | ออกแบบแบบฟอร์มการประเมินคุณภาพการส่งมอบสินค้า/บริการ Manufacturing_N | 1d | 2025-05-28 A | 2025-05-28 A | 62SS | 100% | Aunchala Kengkarunkij; Tanchanok Sunsurat | 16h | 16h |
| 69 | 6.11 | **กลุ่มงาน Commercial** | 1d | 2025-05-28 A | 2025-05-28 A |  | 100% |  | 16h | 16h |
| 70 | 6.11.1 | ออกแบบแบบฟอร์มการประเมินคุณภาพการส่งมอบสินค้า/บริการ Commercial | 1d | 2025-05-28 A | 2025-05-28 A | 62SS | 100% | Aunchala Kengkarunkij; Tanchanok Sunsurat | 16h | 16h |
| 71 | 6.12 | **กลุ่มงาน Outsource** | 1d | 2025-05-28 A | 2025-05-28 A |  | 100% |  | 16h | 16h |
| 72 | 6.12.1 | ออกแบบแบบฟอร์มการประเมินคุณภาพการส่งมอบสินค้า/บริการ (Outsource) | 1d | 2025-05-28 A | 2025-05-28 A | 62SS | 100% | Aunchala Kengkarunkij; Tanchanok Sunsurat | 16h | 16h |
| 73 | 6.13 | **กลุ่มงาน Raw material** | 1d | 2025-05-29 A | 2025-05-29 A |  | 100% |  | 16h | 16h |
| 74 | 6.13.1 | ออกแบบแบบฟอร์มการประเมินคุณภาพการส่งมอบสินค้า/บริการ (RAW MATERIAL) | 1d | 2025-05-29 A | 2025-05-29 A | 72 | 100% | Aunchala Kengkarunkij; Tanchanok Sunsurat | 16h | 16h |
| 75 | 6.14 | **กลุ่มงาน Packaging** | 1d | 2025-05-29 A | 2025-05-29 A |  | 100% |  | 16h | 16h |
| 76 | 6.14.1 | ออกแบบแบบฟอร์มการประเมินคุณภาพการส่งมอบสินค้า/บริการ (PKG) | 1d | 2025-05-29 A | 2025-05-29 A | 74SS | 100% | Aunchala Kengkarunkij; Tanchanok Sunsurat | 16h | 16h |
| 77 | 6.15 | **กลุ่มงาน Agile** | 1d | 2025-05-30 A | 2025-05-30 A |  | 100% |  | 16h | 16h |
| 78 | 6.15.1 | ออกแบบแบบฟอร์มการประเมินคุณภาพการส่งมอบสินค้า/บริการ (AGILE) | 1d | 2025-05-30 A | 2025-05-30 A | 76 | 100% | Aunchala Kengkarunkij; Tanchanok Sunsurat | 16h | 16h |
| 79 | 6.16 | **กลุ่มงาน Property** | 1d | 2025-05-30 A | 2025-05-30 A |  | 100% |  | 16h | 16h |
| 80 | 6.16.1 | ออกแบบแบบฟอร์มการประเมินคุณภาพการส่งมอบสินค้า/บริการ (PROPERTY) | 1d | 2025-05-30 A | 2025-05-30 A | 78SS | 100% | Aunchala Kengkarunkij; Tanchanok Sunsurat | 16h | 16h |
| 81 | 6.17 | **กลุ่มงาน Energy and Chemical** | 1d | 2025-05-30 A | 2025-05-30 A |  | 100% |  | 16h | 16h |
| 82 | 6.17.1 | ออกแบบแบบฟอร์มการประเมินคุณภาพการส่งมอบสินค้า/บริการ (ENERGY_CHEMICAL) | 1d | 2025-05-30 A | 2025-05-30 A | 78SS | 100% | Aunchala Kengkarunkij; Tanchanok Sunsurat | 16h | 16h |
| 83 | 6.18 | จัดทำรายละเอียดการออกแบบระบบ (Design Specification) | 2d | 2025-06-02 A | 2025-06-04 A | 82 | 100% | Aunchala Kengkarunkij; Sutripat Ngamjittrong | 32h | 32h |
| 84 | 6.19 | ประชุมกับ Key User เพื่อสรุปยืนยัน Design Specification | 1d | 2025-06-05 A | 2025-06-05 A | 83 | 100% | Aunchala Kengkarunkij; Chakhrit Kru-Usaha; Sutripat Ngamjittrong; Tanchanok Sunsurat; Pornpun Panyapong | 40h | 40h |
| 85 | 6.20 | Key User ตรวจสอบยืนยัน Design Specification | 1d | 2025-06-06 A | 2025-06-06 A | 84 | 100% | Aunchala Kengkarunkij; Chakhrit Kru-Usaha; Sutripat Ngamjittrong; Tanchanok Sunsurat; Pornpun Panyapong | 40h | 40h |
| 86 | 6.21 | อนุมัติและยืนยัน Design Specification (Milestone #6) | 1d | 2025-06-09 A | 2025-06-09 A | 85 | 100% | Aunchala Kengkarunkij; Sutripat Ngamjittrong | 16h | 16h |

| ID | WBS | Task | Duration | Start | Finish | Predecessors | Complete | Remaining | Total slack | Resources | Work | Actual work |
| --- | --- | --- | --- | --- | --- | --- | --- | --- | --- | --- | --- | --- |
| 87 | 7 | **Implementation & UT** | 31d | 2025-06-04 A | 2025-07-17 |  | 83% | 5.42d | 32d |  | 2736h | 2416h |
| 88 | 7.1 | **พัฒนาแบบประเมินบน Microsoft Form** | 2d | 2025-06-10 A | 2025-06-11 A |  | 100% |  |  |  | 616h | 616h |
| 89 | 7.1.1 | **กลุ่มงาน IT** | 1d | 2025-06-10 A | 2025-06-10 A |  | 100% |  |  |  | 56h | 56h |
| 90 | 7.1.1.1 | พัฒนาแบบฟอร์มการประเมินคุณภาพการส่งมอบสินค้า/บริการ (For IT User) | 1d | 2025-06-10 A | 2025-06-10 A | 86 | 100% |  |  | Aunchala Kengkarunkij; Tanchanok Sunsurat | 16h | 16h |
| 91 | 7.1.1.2 | ทดสอบแบบฟอร์มการประเมินคุณภาพการส่งมอบสินค้า/บริการ (For IT User) | 1d | 2025-06-10 A | 2025-06-10 A | 90SS | 100% |  |  | Aunchala Kengkarunkij; Chakhrit Kru-Usaha; Sutripat Ngamjittrong; Tanchanok Sunsurat; Pornpun Panyapong | 40h | 40h |
| 92 | 7.1.2 | **กลุ่มงาน WASTE** | 1d | 2025-06-10 A | 2025-06-10 A |  | 100% |  |  |  | 56h | 56h |
| 93 | 7.1.2.1 | พัฒนาแบบฟอร์มการประเมินคุณภาพการส่งมอบสินค้า/บริการ WASTE | 1d | 2025-06-10 A | 2025-06-10 A | 90SS | 100% |  |  | Aunchala Kengkarunkij; Tanchanok Sunsurat | 16h | 16h |
| 94 | 7.1.2.2 | ทดสอบแบบฟอร์มการประเมินคุณภาพการส่งมอบสินค้า/บริการ (For IT User) | 1d | 2025-06-10 A | 2025-06-10 A | 90SS | 100% |  |  | Aunchala Kengkarunkij; Chakhrit Kru-Usaha; Sutripat Ngamjittrong; Tanchanok Sunsurat; Pornpun Panyapong | 40h | 40h |
| 95 | 7.1.3 | **กลุ่มงาน Logistic** | 1d | 2025-06-10 A | 2025-06-10 A |  | 100% |  |  |  | 56h | 56h |
| 96 | 7.1.3.1 | พัฒนาแบบฟอร์มการประเมินคุณภาพการส่งมอบสินค้า/บริการ Vendor-N (G.Logistics) | 1d | 2025-06-10 A | 2025-06-10 A | 90SS | 100% |  |  | Aunchala Kengkarunkij; Tanchanok Sunsurat | 16h | 16h |
| 97 | 7.1.3.2 | ทดสอบแบบฟอร์มการประเมินคุณภาพการส่งมอบสินค้า/บริการ Vendor-N (G.Logistics) | 1d | 2025-06-10 A | 2025-06-10 A | 90SS | 100% |  |  | Aunchala Kengkarunkij; Chakhrit Kru-Usaha; Sutripat Ngamjittrong; Tanchanok Sunsurat; Pornpun Panyapong | 40h | 40h |
| 98 | 7.1.4 | **กลุ่มงาน Manufacturing** | 1d | 2025-06-10 A | 2025-06-10 A |  | 100% |  |  |  | 56h | 56h |
| 99 | 7.1.4.1 | พัฒนาแบบฟอร์มการประเมินคุณภาพการส่งมอบสินค้า/บริการ Manufacturing_N | 1d | 2025-06-10 A | 2025-06-10 A | 90SS | 100% |  |  | Aunchala Kengkarunkij; Tanchanok Sunsurat | 16h | 16h |
| 100 | 7.1.4.2 | ทดสอบแบบฟอร์มการประเมินคุณภาพการส่งมอบสินค้า/บริการ Manufacturing_N | 1d | 2025-06-10 A | 2025-06-10 A | 90SS | 100% |  |  | Aunchala Kengkarunkij; Chakhrit Kru-Usaha; Sutripat Ngamjittrong; Tanchanok Sunsurat; Pornpun Panyapong | 40h | 40h |
| 101 | 7.1.5 | **กลุ่มงาน Commercial** | 1d | 2025-06-10 A | 2025-06-10 A |  | 100% |  |  |  | 56h | 56h |
| 102 | 7.1.5.1 | พัฒนาแบบฟอร์มการประเมินคุณภาพการส่งมอบสินค้า/บริการ Commercial | 1d | 2025-06-10 A | 2025-06-10 A | 90SS | 100% |  |  | Aunchala Kengkarunkij; Tanchanok Sunsurat | 16h | 16h |
| 103 | 7.1.5.2 | ทดสอบแบบฟอร์มการประเมินคุณภาพการส่งมอบสินค้า/บริการ Commercial | 1d | 2025-06-10 A | 2025-06-10 A | 90SS | 100% |  |  | Aunchala Kengkarunkij; Chakhrit Kru-Usaha; Sutripat Ngamjittrong; Tanchanok Sunsurat; Pornpun Panyapong | 40h | 40h |
| 104 | 7.1.6 | **กลุ่มงาน Outsource** | 1d | 2025-06-10 A | 2025-06-10 A |  | 100% |  |  |  | 56h | 56h |
| 105 | 7.1.6.1 | พัฒนาแบบฟอร์มการประเมินคุณภาพการส่งมอบสินค้า/บริการ (Outsource) | 1d | 2025-06-10 A | 2025-06-10 A | 90SS | 100% |  |  | Aunchala Kengkarunkij; Tanchanok Sunsurat | 16h | 16h |
| 106 | 7.1.6.2 | ทดสอบแบบฟอร์มการประเมินคุณภาพการส่งมอบสินค้า/บริการ (Outsource) | 1d | 2025-06-10 A | 2025-06-10 A | 90SS | 100% |  |  | Aunchala Kengkarunkij; Chakhrit Kru-Usaha; Sutripat Ngamjittrong; Tanchanok Sunsurat; Pornpun Panyapong | 40h | 40h |
| 107 | 7.1.7 | **กลุ่มงาน Raw material** | 1d | 2025-06-11 A | 2025-06-11 A |  | 100% |  |  |  | 56h | 56h |
| 108 | 7.1.7.1 | พัฒนาแบบฟอร์มการประเมินคุณภาพการส่งมอบสินค้า/บริการ RAW MATERIAL | 1d | 2025-06-11 A | 2025-06-11 A | 106 | 100% |  |  | Aunchala Kengkarunkij; Tanchanok Sunsurat | 16h | 16h |
| 109 | 7.1.7.2 | ทดสอบแบบฟอร์มการประเมินคุณภาพการส่งมอบสินค้า/บริการ RAW MATERIAL | 1d | 2025-06-11 A | 2025-06-11 A | 108SS | 100% |  |  | Aunchala Kengkarunkij; Chakhrit Kru-Usaha; Sutripat Ngamjittrong; Tanchanok Sunsurat; Pornpun Panyapong | 40h | 40h |
| 110 | 7.1.8 | **กลุ่มงาน Packaging** | 1d | 2025-06-11 A | 2025-06-11 A |  | 100% |  |  |  | 56h | 56h |
| 111 | 7.1.8.1 | พัฒนาแบบฟอร์มการประเมินคุณภาพการส่งมอบสินค้า/บริการ PKG | 1d | 2025-06-11 A | 2025-06-11 A | 108SS | 100% |  |  | Aunchala Kengkarunkij; Tanchanok Sunsurat | 16h | 16h |
| 112 | 7.1.8.2 | ทดสอบแบบฟอร์มการประเมินคุณภาพการส่งมอบสินค้า/บริการ PKG | 1d | 2025-06-11 A | 2025-06-11 A | 108SS | 100% |  |  | Aunchala Kengkarunkij; Chakhrit Kru-Usaha; Sutripat Ngamjittrong; Tanchanok Sunsurat; Pornpun Panyapong | 40h | 40h |

| ID | WBS | Task | Duration | Start | Finish | Predecessors | Complete | Resources | Work | Actual work |
| --- | --- | --- | --- | --- | --- | --- | --- | --- | --- | --- |
| 113 | 7.1.9 | **กลุ่มงาน Agile** | 1d | 2025-06-11 A | 2025-06-11 A |  | 100% |  | 56h | 56h |
| 114 | 7.1.9.1 | พัฒนาแบบฟอร์มการประเมินคุณภาพการส่งมอบสินค้า/บริการ AGILE | 1d | 2025-06-11 A | 2025-06-11 A | 108SS | 100% | Aunchala Kengkarunkij; Tanchanok Sunsurat | 16h | 16h |
| 115 | 7.1.9.2 | ทดสอบแบบฟอร์มการประเมินคุณภาพการส่งมอบสินค้า/บริการ AGILE | 1d | 2025-06-11 A | 2025-06-11 A | 108SS | 100% | Aunchala Kengkarunkij; Chakhrit Kru-Usaha; Sutripat Ngamjittrong; Tanchanok Sunsurat; Pornpun Panyapong | 40h | 40h |
| 116 | 7.1.10 | **กลุ่มงาน Property** | 1d | 2025-06-11 A | 2025-06-11 A |  | 100% |  | 56h | 56h |
| 117 | 7.1.10.1 | พัฒนาแบบฟอร์มการประเมินคุณภาพการส่งมอบสินค้า/บริการ PROPERTY | 1d | 2025-06-11 A | 2025-06-11 A | 108SS | 100% | Aunchala Kengkarunkij; Tanchanok Sunsurat | 16h | 16h |
| 118 | 7.1.10.2 | ทดสอบแบบฟอร์มการประเมินคุณภาพการส่งมอบสินค้า/บริการ PROPERTY | 1d | 2025-06-11 A | 2025-06-11 A | 108SS | 100% | Aunchala Kengkarunkij; Chakhrit Kru-Usaha; Sutripat Ngamjittrong; Tanchanok Sunsurat; Pornpun Panyapong | 40h | 40h |
| 119 | 7.1.11 | **กลุ่มงาน Energy and Chemical** | 1d | 2025-06-11 A | 2025-06-11 A |  | 100% |  | 56h | 56h |
| 120 | 7.1.11.1 | พัฒนาแบบฟอร์มการประเมินคุณภาพการส่งมอบสินค้า/บริการ ENERGY_CHEMICAL | 1d | 2025-06-11 A | 2025-06-11 A | 108SS | 100% | Aunchala Kengkarunkij; Tanchanok Sunsurat | 16h | 16h |
| 121 | 7.1.11.2 | ทดสอบแบบฟอร์มการประเมินคุณภาพการส่งมอบสินค้า/บริการ ENERGY_CHEMICAL | 1d | 2025-06-11 A | 2025-06-11 A | 108SS | 100% | Aunchala Kengkarunkij; Chakhrit Kru-Usaha; Sutripat Ngamjittrong; Tanchanok Sunsurat; Pornpun Panyapong | 40h | 40h |
| 122 | 7.2 | **พัฒนาแบบประเมินของกลุ่มงาน IT** | 1d | 2025-06-11 A | 2025-06-11 A |  | 100% |  | 96h | 96h |
| 123 | 7.2.1 | พัฒนา Flow แบบประเมินคุณภาพการส่งมอบสินค้า/บริการ (For IT User) บน Power Automate | 1d | 2025-06-11 A | 2025-06-11 A | 91 | 100% | Chakhrit Kru-Usaha | 8h | 8h |
| 124 | 7.2.2 | ทดสอบการเชื่อมต่อระหว่าง Microsoft Form และ Power Automate | 1d | 2025-06-11 A | 2025-06-11 A | 123SS | 100% | Aunchala Kengkarunkij; Chakhrit Kru-Usaha; Sutripat Ngamjittrong; Tanchanok Sunsurat; Pornpun Panyapong | 40h | 40h |
| 125 | 7.2.3 | พัฒนา List สำหรับจัดเก็บข้อมูลแบบประเมินคุณภาพการส่งมอบสินค้า/บริการ (For IT User) บน Sharepoint | 1d | 2025-06-11 A | 2025-06-11 A | 123SS | 100% | Chakhrit Kru-Usaha | 8h | 8h |
| 126 | 7.2.4 | ทดสอบการเชื่อมต่อระหว่าง Microsoft Form ,Power Automate และ Sharepoint List | 1d | 2025-06-11 A | 2025-06-11 A | 123SS | 100% | Aunchala Kengkarunkij; Chakhrit Kru-Usaha; Sutripat Ngamjittrong; Tanchanok Sunsurat; Pornpun Panyapong | 40h | 40h |
| 127 | 7.3 | **พัฒนาแบบประเมินของกลุ่มงาน WASTE** | 1d | 2025-06-11 A | 2025-06-11 A |  | 100% |  | 96h | 96h |
| 128 | 7.3.1 | พัฒนา Flow แบบประเมินคุณภาพการส่งมอบสินค้า/บริการ WASTE บน Power Automate | 1d | 2025-06-11 A | 2025-06-11 A | 123SS | 100% | Chakhrit Kru-Usaha | 8h | 8h |
| 129 | 7.3.2 | ทดสอบการเชื่อมต่อระหว่าง Microsoft Form และ Power Automate | 1d | 2025-06-11 A | 2025-06-11 A | 123SS | 100% | Aunchala Kengkarunkij; Chakhrit Kru-Usaha; Sutripat Ngamjittrong; Tanchanok Sunsurat; Pornpun Panyapong | 40h | 40h |
| 130 | 7.3.3 | พัฒนา List สำหรับจัดเก็บข้อมูลแบบประเมินคุณภาพการส่งมอบสินค้า/บริการ WASTE บน Sharepoint | 1d | 2025-06-11 A | 2025-06-11 A | 123SS | 100% | Chakhrit Kru-Usaha | 8h | 8h |
| 131 | 7.3.4 | ทดสอบการเชื่อมต่อระหว่าง Microsoft Form ,Power Automate และ Sharepoint List | 1d | 2025-06-11 A | 2025-06-11 A | 123SS | 100% | Aunchala Kengkarunkij; Chakhrit Kru-Usaha; Sutripat Ngamjittrong; Tanchanok Sunsurat; Pornpun Panyapong | 40h | 40h |
| 132 | 7.4 | **พัฒนาแบบประเมินของกลุ่มงาน Logistic** | 1d | 2025-06-11 A | 2025-06-11 A |  | 100% |  | 96h | 96h |
| 133 | 7.4.1 | พัฒนา Flow แบบประเมินคุณภาพการส่งมอบสินค้า/บริการ Vendor-N (G.Logistics) บน Power Automate | 1d | 2025-06-11 A | 2025-06-11 A | 123SS | 100% | Chakhrit Kru-Usaha | 8h | 8h |
| 134 | 7.4.2 | ทดสอบการเชื่อมต่อระหว่าง Microsoft Form และ Power Automate | 1d | 2025-06-11 A | 2025-06-11 A | 123SS | 100% | Aunchala Kengkarunkij; Chakhrit Kru-Usaha; Sutripat Ngamjittrong; Tanchanok Sunsurat; Pornpun Panyapong | 40h | 40h |
| 135 | 7.4.3 | พัฒนา List สำหรับจัดเก็บข้อมูลแบบประเมินคุณภาพการส่งมอบสินค้า/บริการ Vendor-N (G.Logistics) บน Sharepoint | 1d | 2025-06-11 A | 2025-06-11 A | 123SS | 100% | Chakhrit Kru-Usaha | 8h | 8h |
| 136 | 7.4.4 | ทดสอบการเชื่อมต่อระหว่าง Microsoft Form ,Power Automate และ Sharepoint List | 1d | 2025-06-11 A | 2025-06-11 A | 123SS | 100% | Aunchala Kengkarunkij; Chakhrit Kru-Usaha; Sutripat Ngamjittrong; Tanchanok Sunsurat; Pornpun Panyapong | 40h | 40h |

| ID | WBS | Task | Duration | Start | Finish | Predecessors | Complete | Resources | Work | Actual work |
| --- | --- | --- | --- | --- | --- | --- | --- | --- | --- | --- |
| 137 | 7.5 | **พัฒนาแบบประเมินของกลุ่มงาน Manufaturing** | 1d | 2025-06-11 A | 2025-06-11 A |  | 100% |  | 96h | 96h |
| 138 | 7.5.1 | พัฒนา Flow แบบประเมินคุณภาพการส่งมอบสินค้า/บริการ Manufacturing_N บน Power Automate | 1d | 2025-06-11 A | 2025-06-11 A | 123SS | 100% | Chakhrit Kru-Usaha | 8h | 8h |
| 139 | 7.5.2 | ทดสอบการเชื่อมต่อระหว่าง Microsoft Form และ Power Automate | 1d | 2025-06-11 A | 2025-06-11 A | 123SS | 100% | Aunchala Kengkarunkij; Chakhrit Kru-Usaha; Sutripat Ngamjittrong; Tanchanok Sunsurat; Pornpun Panyapong | 40h | 40h |
| 140 | 7.5.3 | พัฒนา List สำหรับจัดเก็บข้อมูลแบบประเมินคุณภาพการส่งมอบสินค้า/บริการ Manufacturing_N บน Sharepoint | 1d | 2025-06-11 A | 2025-06-11 A | 123SS | 100% | Chakhrit Kru-Usaha | 8h | 8h |
| 141 | 7.5.4 | ทดสอบการเชื่อมต่อระหว่าง Microsoft Form ,Power Automate และ Sharepoint List | 1d | 2025-06-11 A | 2025-06-11 A | 123SS | 100% | Aunchala Kengkarunkij; Chakhrit Kru-Usaha; Sutripat Ngamjittrong; Tanchanok Sunsurat; Pornpun Panyapong | 40h | 40h |
| 142 | 7.6 | **พัฒนาแบบประเมินของกลุ่มงาน Commercial** | 1d | 2025-06-11 A | 2025-06-11 A |  | 100% |  | 96h | 96h |
| 143 | 7.6.1 | พัฒนา Flow แบบประเมินคุณภาพการส่งมอบสินค้า/บริการ Commercial บน Power Automate | 1d | 2025-06-11 A | 2025-06-11 A | 123SS | 100% | Chakhrit Kru-Usaha | 8h | 8h |
| 144 | 7.6.2 | ทดสอบการเชื่อมต่อระหว่าง Microsoft Form และ Power Automate | 1d | 2025-06-11 A | 2025-06-11 A | 123SS | 100% | Aunchala Kengkarunkij; Chakhrit Kru-Usaha; Sutripat Ngamjittrong; Tanchanok Sunsurat; Pornpun Panyapong | 40h | 40h |
| 145 | 7.6.3 | พัฒนา List สำหรับจัดเก็บข้อมูลแบบประเมินคุณภาพการส่งมอบสินค้า/บริการ Commercial บน Sharepoint | 1d | 2025-06-11 A | 2025-06-11 A | 123SS | 100% | Chakhrit Kru-Usaha | 8h | 8h |
| 146 | 7.6.4 | ทดสอบการเชื่อมต่อระหว่าง Microsoft Form ,Power Automate และ Sharepoint List | 1d | 2025-06-11 A | 2025-06-11 A | 123SS | 100% | Aunchala Kengkarunkij; Chakhrit Kru-Usaha; Sutripat Ngamjittrong; Tanchanok Sunsurat; Pornpun Panyapong | 40h | 40h |
| 147 | 7.7 | **พัฒนาแบบประเมินของกลุ่มงาน Outsource** | 1d | 2025-06-11 A | 2025-06-11 A |  | 100% |  | 96h | 96h |
| 148 | 7.7.1 | พัฒนา Flow แบบประเมินคุณภาพการส่งมอบสินค้า/บริการ (Outsource) บน Power Automate | 1d | 2025-06-11 A | 2025-06-11 A | 123SS | 100% | Chakhrit Kru-Usaha | 8h | 8h |
| 149 | 7.7.2 | ทดสอบการเชื่อมต่อระหว่าง Microsoft Form และ Power Automate | 1d | 2025-06-11 A | 2025-06-11 A | 123SS | 100% | Aunchala Kengkarunkij; Chakhrit Kru-Usaha; Sutripat Ngamjittrong; Tanchanok Sunsurat; Pornpun Panyapong | 40h | 40h |
| 150 | 7.7.3 | พัฒนา List สำหรับจัดเก็บข้อมูลแบบประเมินคุณภาพการส่งมอบสินค้า/บริการ (Outsource) บน Sharepoint | 1d | 2025-06-11 A | 2025-06-11 A | 123SS | 100% | Chakhrit Kru-Usaha | 8h | 8h |
| 151 | 7.7.4 | ทดสอบการเชื่อมต่อระหว่าง Microsoft Form ,Power Automate และ Sharepoint List | 1d | 2025-06-11 A | 2025-06-11 A | 123SS | 100% | Aunchala Kengkarunkij; Chakhrit Kru-Usaha; Sutripat Ngamjittrong; Tanchanok Sunsurat; Pornpun Panyapong | 40h | 40h |
| 152 | 7.8 | **พัฒนาแบบประเมินของกลุ่มงาน Raw material** | 1d | 2025-06-12 A | 2025-06-12 A |  | 100% |  | 96h | 96h |
| 153 | 7.8.1 | พัฒนา Flow แบบประเมินคุณภาพการส่งมอบสินค้า/บริการ RAW MATERIAL บน Power Automate | 1d | 2025-06-12 A | 2025-06-12 A | 109 | 100% | Chakhrit Kru-Usaha | 8h | 8h |
| 154 | 7.8.2 | ทดสอบการเชื่อมต่อระหว่าง Microsoft Form และ Power Automate | 1d | 2025-06-12 A | 2025-06-12 A | 153SS | 100% | Aunchala Kengkarunkij; Chakhrit Kru-Usaha; Sutripat Ngamjittrong; Tanchanok Sunsurat; Pornpun Panyapong | 40h | 40h |
| 155 | 7.8.3 | พัฒนา List สำหรับจัดเก็บข้อมูลแบบประเมินคุณภาพการส่งมอบสินค้า/บริการ RAW MATERIAL บน Sharepoint | 1d | 2025-06-12 A | 2025-06-12 A | 153SS | 100% | Chakhrit Kru-Usaha | 8h | 8h |
| 156 | 7.8.4 | ทดสอบการเชื่อมต่อระหว่าง Microsoft Form ,Power Automate และ Sharepoint List | 1d | 2025-06-12 A | 2025-06-12 A | 153SS | 100% | Aunchala Kengkarunkij; Chakhrit Kru-Usaha; Sutripat Ngamjittrong; Tanchanok Sunsurat; Pornpun Panyapong | 40h | 40h |
| 157 | 7.9 | **พัฒนาแบบประเมินของกลุ่มงาน Packaging** | 1d | 2025-06-12 A | 2025-06-12 A |  | 100% |  | 96h | 96h |
| 158 | 7.9.1 | พัฒนา Flow แบบประเมินคุณภาพการส่งมอบสินค้า/บริการ PKG บน Power Automate | 1d | 2025-06-12 A | 2025-06-12 A | 153SS | 100% | Chakhrit Kru-Usaha | 8h | 8h |
| 159 | 7.9.2 | ทดสอบการเชื่อมต่อระหว่าง Microsoft Form และ Power Automate | 1d | 2025-06-12 A | 2025-06-12 A | 153SS | 100% | Aunchala Kengkarunkij; Chakhrit Kru-Usaha; Sutripat Ngamjittrong; Tanchanok Sunsurat; Pornpun Panyapong | 40h | 40h |
| 160 | 7.9.3 | พัฒนา List สำหรับจัดเก็บข้อมูลแบบประเมินคุณภาพการส่งมอบสินค้า/บริการ PKG บน Sharepoint | 1d | 2025-06-12 A | 2025-06-12 A | 153SS | 100% | Chakhrit Kru-Usaha | 8h | 8h |
| 161 | 7.9.4 | ทดสอบการเชื่อมต่อระหว่าง Microsoft Form ,Power Automate และ Sharepoint List | 1d | 2025-06-12 A | 2025-06-12 A | 153SS | 100% | Aunchala Kengkarunkij; Chakhrit Kru-Usaha; Sutripat Ngamjittrong; Tanchanok Sunsurat; Pornpun Panyapong | 40h | 40h |

| ID | WBS | Task | Duration | Start | Finish | Predecessors | Complete | Remaining | Total slack | Free slack | Resources | Work | Actual work |
| --- | --- | --- | --- | --- | --- | --- | --- | --- | --- | --- | --- | --- | --- |
| 162 | 7.10 | **พัฒนาแบบประเมินของกลุ่มงาน Agile** | 1d | 2025-06-12 A | 2025-06-12 A |  | 100% |  |  |  |  | 96h | 96h |
| 163 | 7.10.1 | พัฒนา Flow แบบประเมินคุณภาพการส่งมอบสินค้า/บริการ AGILE บน Power Automate | 1d | 2025-06-12 A | 2025-06-12 A | 153SS | 100% |  |  |  | Chakhrit Kru-Usaha | 8h | 8h |
| 164 | 7.10.2 | ทดสอบการเชื่อมต่อระหว่าง Microsoft Form และ Power Automate | 1d | 2025-06-12 A | 2025-06-12 A | 153SS | 100% |  |  |  | Aunchala Kengkarunkij; Chakhrit Kru-Usaha; Sutripat Ngamjittrong; Tanchanok Sunsurat; Pornpun Panyapong | 40h | 40h |
| 165 | 7.10.3 | พัฒนา List สำหรับจัดเก็บข้อมูลแบบประเมินคุณภาพการส่งมอบสินค้า/บริการ AGILE บน Sharepoint | 1d | 2025-06-12 A | 2025-06-12 A | 153SS | 100% |  |  |  | Chakhrit Kru-Usaha | 8h | 8h |
| 166 | 7.10.4 | ทดสอบการเชื่อมต่อระหว่าง Microsoft Form ,Power Automate และ Sharepoint List | 1d | 2025-06-12 A | 2025-06-12 A | 153SS | 100% |  |  |  | Aunchala Kengkarunkij; Chakhrit Kru-Usaha; Sutripat Ngamjittrong; Tanchanok Sunsurat; Pornpun Panyapong | 40h | 40h |
| 167 | 7.11 | **พัฒนาแบบประเมินของกลุ่มงาน Property** | 1d | 2025-06-12 A | 2025-06-12 A |  | 100% |  |  |  |  | 96h | 96h |
| 168 | 7.11.1 | พัฒนา Flow แบบประเมินคุณภาพการส่งมอบสินค้า/บริการ PROPERTY บน Power Automate | 1d | 2025-06-12 A | 2025-06-12 A | 153SS | 100% |  |  |  | Chakhrit Kru-Usaha | 8h | 8h |
| 169 | 7.11.2 | ทดสอบการเชื่อมต่อระหว่าง Microsoft Form และ Power Automate | 1d | 2025-06-12 A | 2025-06-12 A | 153SS | 100% |  |  |  | Aunchala Kengkarunkij; Chakhrit Kru-Usaha; Sutripat Ngamjittrong; Tanchanok Sunsurat; Pornpun Panyapong | 40h | 40h |
| 170 | 7.11.3 | พัฒนา List สำหรับจัดเก็บข้อมูลแบบประเมินคุณภาพการส่งมอบสินค้า/บริการ PROPERTY บน Sharepoint | 1d | 2025-06-12 A | 2025-06-12 A | 153SS | 100% |  |  |  | Chakhrit Kru-Usaha | 8h | 8h |
| 171 | 7.11.4 | ทดสอบการเชื่อมต่อระหว่าง Microsoft Form ,Power Automate และ Sharepoint List | 1d | 2025-06-12 A | 2025-06-12 A | 153SS | 100% |  |  |  | Aunchala Kengkarunkij; Chakhrit Kru-Usaha; Sutripat Ngamjittrong; Tanchanok Sunsurat; Pornpun Panyapong | 40h | 40h |
| 172 | 7.12 | **พัฒนาแบบประเมินของกลุ่มงาน Energy and Chemical** | 1d | 2025-06-12 A | 2025-06-12 A |  | 100% |  |  |  |  | 96h | 96h |
| 173 | 7.12.1 | พัฒนา Flow แบบประเมินคุณภาพการส่งมอบสินค้า/บริการ ENERGY_CHEMICAL บน Power Automate | 1d | 2025-06-12 A | 2025-06-12 A | 153SS | 100% |  |  |  | Chakhrit Kru-Usaha | 8h | 8h |
| 174 | 7.12.2 | ทดสอบการเชื่อมต่อระหว่าง Microsoft Form และ Power Automate | 1d | 2025-06-12 A | 2025-06-12 A | 153SS | 100% |  |  |  | Aunchala Kengkarunkij; Chakhrit Kru-Usaha; Sutripat Ngamjittrong; Tanchanok Sunsurat; Pornpun Panyapong | 40h | 40h |
| 175 | 7.12.3 | พัฒนา List สำหรับจัดเก็บข้อมูลแบบประเมินคุณภาพการส่งมอบสินค้า/บริการ ENERGY_CHEMICAL บน Sharepoint | 1d | 2025-06-12 A | 2025-06-12 A | 153SS | 100% |  |  |  | Chakhrit Kru-Usaha | 8h | 8h |
| 176 | 7.12.4 | ทดสอบการเชื่อมต่อระหว่าง Microsoft Form ,Power Automate และ Sharepoint List | 1d | 2025-06-12 A | 2025-06-12 A | 153SS | 100% |  |  |  | Aunchala Kengkarunkij; Chakhrit Kru-Usaha; Sutripat Ngamjittrong; Tanchanok Sunsurat; Pornpun Panyapong | 40h | 40h |
| 177 | 7.13 | พัฒนาโปรแกรมสำหรับดึงข้อมูลจาก Sharepoint List เก็บลง Database | 2d | 2025-06-13 A | 2025-06-16 A | 176 | 100% |  |  |  | Sutripat Ngamjittrong | 16h | 16h |
| 178 | 7.14 | ทดสอบการเชื่อมต่อโปรแกรมระหว่าง Sharepoint List และ Database | 2d | 2025-06-17 A | 2025-06-18 A | 177 | 100% |  |  |  | Sutripat Ngamjittrong | 16h | 16h |
| 179 | 7.15 | พัฒนา Model ใช้สำหรับนำไปแสดงผลรายงาน | 14d | 2025-06-19 A | 2025-07-08 | 178 | 64% | 5d | 33d | 0d | Sutripat Ngamjittrong | 112h | 72h |
| 180 | 7.16 | พัฒนา Dashboard | 5d | 2025-07-09 | 2025-07-16 | 179 |  |  | 33d |  | Sutripat Ngamjittrong | 40h |  |
| 181 | 7.17 | **จัดทำ Draft Process flow และเอกสารที่เกี่ยวข้อง รองรับกระบวนการใหม่** | 30d | 2025-06-04 A | 2025-07-16 |  | 67% | 10d | 0d |  |  | 872h | 640h |
| 182 | 7.17.1 | จัดทำเอกสาร Business Process Flow | 24d | 2025-06-04 A | 2025-07-07 | 60FS-4d | 83% | 4d | 0d |  | Aunchala Kengkarunkij; Junjeera Muanbida; Tanchanok Sunsurat; Taravit Sinpreedee | 768h | 640h |
| 183 | 7.17.2 | ส่งมอบ UPM Sign-off และ Draf of ARIS Flow ให้กับหน่วยงาน BPM | 3d | 2025-07-08 | 2025-07-11 | 182 |  |  | 0d |  | Aunchala Kengkarunkij; Tanchanok Sunsurat | 48h |  |
| 184 | 7.17.3 | จัดเก็บเอกสารเข้าระบบ ISO และส่งมอบเอกสารให้หน่วยงาน BPM | 2d | 2025-07-14 | 2025-07-15 | 183 |  |  | 0d |  | Aunchala Kengkarunkij; Junjeera Muanbida; Taravit Sinpreedee | 48h |  |
| 185 | 7.17.4 | ส่งมอบBPM Sign-off Draft Process Flow และเอกสารที่เกี่ยวข้อง (Milestone #7) | 1d | 2025-07-16 | 2025-07-16 | 184 |  |  | 0d |  | Aunchala Kengkarunkij | 8h |  |
| 186 | 7.18 | ส่งมอบระบบงานที่พัฒนาเรียบร้อยแล้ว (Milestone #8) | 1d | 2025-07-17 | 2025-07-17 | 185 |  |  | 0d |  | Aunchala Kengkarunkij | 8h |  |

| ID | WBS | Task | Duration | Start | Finish | Predecessors | Total slack | Resources | Work |
| --- | --- | --- | --- | --- | --- | --- | --- | --- | --- |
| 187 | 8 | **Test And Trainning Key User** | 10d | 2025-07-18 | 2025-08-01 |  | 0d |  | 152h |
| 188 | 8.1 | จัดเตรียม Environment Test | 1d | 2025-07-18 | 2025-07-18 | 186 | 0d | Aunchala Kengkarunkij; Sutripat Ngamjittrong | 16h |
| 189 | 8.2 | จัดทำเอกสารการฝึกอบรมสำหรับ Key User (Trainng Document) | 1d | 2025-07-21 | 2025-07-21 | 188 | 0d | Aunchala Kengkarunkij; Sutripat Ngamjittrong | 16h |
| 190 | 8.3 | ดำเนินการทดสอบ UAT และ Training | 5d | 2025-07-22 | 2025-07-29 | 189 | 0d | Aunchala Kengkarunkij; Sutripat Ngamjittrong | 80h |
| 191 | 8.4 | แก้ไข Defect จาก UAT | 2d | 2025-07-30 | 2025-07-31 | 190 | 0d | Aunchala Kengkarunkij; Sutripat Ngamjittrong | 32h |
| 192 | 8.5 | UAT Sign-off (Milestone #9) | 1d | 2025-08-01 | 2025-08-01 | 191 | 0d | Aunchala Kengkarunkij | 8h |
| 193 | 9 | **Deploy** | 3d | 2025-08-04 | 2025-08-06 |  | 0d |  | 24h |
| 194 | 9.1 | จัดทำแผน Go-Live Plan | 1d | 2025-08-04 | 2025-08-04 | 192 | 0d | Sutripat Ngamjittrong | 8h |
| 195 | 9.2 | ตรวจสอบความพร้อมในการ Go-Live (Go/No-Go Checklist) | 1d | 2025-08-05 | 2025-08-05 | 194 | 0d | Sutripat Ngamjittrong | 8h |
| 196 | 9.3 | ดำเนินการ Go-Live(Milestone #10) | 1d | 2025-08-06 | 2025-08-06 | 195 | 0d | Sutripat Ngamjittrong | 8h |
| 197 | 10 | **Stabilization** | 15d | 2025-08-07 | 2025-08-28 |  | 0d |  | 232h |
| 198 | 10.1 | สนับสนุนการใช้งาน หลัง Go-Live (หลังจบโครงการ 1 Month) | 15d | 2025-08-07 | 2025-08-28 | 196 | 0d | Sutripat Ngamjittrong | 120h |
| 199 | 10.2 | เก็บ Issues Log บน ระบบจริงที่ใช้งาน และแก้ไข | 14d | 2025-08-07 | 2025-08-27 | 198SS | 0d | Sutripat Ngamjittrong | 112h |
| 200 | 11 | **Project Closure** | 5d | 2025-08-28 | 2025-09-03 |  | 0d |  | 88h |
| 201 | 11.1 | จัดทำ Lesson Learned โครงการ | 1d | 2025-08-28 | 2025-08-28 | 199 | 0d | Aunchala Kengkarunkij; Sutripat Ngamjittrong; Tanchanok Sunsurat; Pornpun Panyapong | 32h |
| 202 | 11.2 | ส่งมอบโครงการ สู่งานประจำ (Handover) | 1d | 2025-08-29 | 2025-08-29 | 201 | 0d | Sutripat Ngamjittrong | 8h |
| 203 | 11.3 | จัดเก็บเอกสาร Project Files ทั้งหมด | 1d | 2025-09-01 | 2025-09-01 | 202 | 0d | Aunchala Kengkarunkij; Sutripat Ngamjittrong | 16h |
| 204 | 11.4 | กำหนดระยะเวลาในการวัด Outcome ของโครงการ (Project KPI) | 1d | 2025-09-02 | 2025-09-02 | 203 | 0d | Aunchala Kengkarunkij; Sutripat Ngamjittrong | 16h |
| 205 | 11.5 | ดำเนินการปิดโครงการ (Milestone #11) | 1d | 2025-09-03 | 2025-09-03 | 204 | 0d | Sutripat Ngamjittrong; Aunchala Kengkarunkij | 16h |
