# Vendor Evaluation

Schedule from MS Project, 2025-04-15 to 2025-09-03, status date 2025-04-15.

## Calendars

- Standard: Mon-Fri 08:00-12:00, 13:00-17:00; Sat-Sun off.

## Schedule

| ID | WBS | Task | Type | Duration | Start | Finish | Predecessors | Total slack | Constraint |
| --- | --- | --- | --- | --- | --- | --- | --- | --- | --- |
| 1 | 1 | **Milestones** |  | 90d | 2025-04-30 | 2025-09-03 |  | 0d |  |
| 2 | 1.1 | เสนอ Project Charter ให้ผู้บริหารอนุมัติ (Milestone #1) | milestone | 0d | 2025-04-30 | 2025-04-30 | 15 | 90d |  |
| 3 | 1.2 | ประชุม Kick off โครงการ เพื่อสื่อสารแผนงานโครงการ (Milestone #2) | milestone | 0d | 2025-05-02 | 2025-05-02 | 16 | 88d |  |
| 4 | 1.3 | อนุมัติและยืนยัน Requirement Specification (Milestone #3) | milestone | 0d | 2025-05-14 | 2025-05-14 | 51 | 80d |  |
| 5 | 1.4 | อนุมัติและยืนยัน Data Retention Sign-Off Form (Milestone #4) | milestone | 0d | 2025-05-15 | 2025-05-15 | 53 | 79d |  |
| 6 | 1.5 | ส่งมอบเอกสาร Business process risk management และเอกสารที่เกี่ยวข้อง (Milestone #5) | milestone | 0d | 2025-05-27 | 2025-05-27 | 60 | 71d |  |
| 7 | 1.6 | อนุมัติและยืนยัน Design Specification (Milestone #6) | milestone | 0d | 2025-06-09 | 2025-06-09 | 85 | 62d |  |
| 8 | 1.7 | ส่งมอบBPM Sign-off Draft Process Flow และเอกสารที่เกี่ยวข้อง (Milestone #7) | milestone | 0d | 2025-07-16 | 2025-07-16 | 184 | 35d |  |
| 9 | 1.8 | ส่งมอบระบบงานที่พัฒนาเรียบร้อยแล้ว (Milestone #8) | milestone | 0d | 2025-07-17 | 2025-07-17 | 185 | 34d |  |
| 10 | 1.9 | UAT Sign-off (Milestone #9) | milestone | 0d | 2025-08-01 | 2025-08-01 | 191 | 23d |  |
| 11 | 1.10 | ดำเนินการ Go-Live(Milestone #10) | milestone | 0d | 2025-08-06 | 2025-08-06 | 195 | 20d |  |
| 12 | 1.11 | ดำเนินการปิดโครงการ (Milestone #11) | milestone | 0d | 2025-09-03 | 2025-09-03 | 204 | 0d |  |
| 13 | 2 | **Project Preparation** |  | 14d | 2025-04-15 | 2025-05-02 |  | 0d |  |
| 14 | 2.1 | จัดทำ Project Charter |  | 11d | 2025-04-15 | 2025-04-29 |  | 0d |  |
| 15 | 2.2 | เสนอ Project Charter ให้ผู้บริหารอนุมัติ (Milestone #1) |  | 1d | 2025-04-30 | 2025-04-30 | 14 | 0d |  |
| 16 | 2.3 | ประชุม Kick off โครงการ เพื่อสื่อสารแผนงานโครงการ (Milestone #2) |  | 1d | 2025-05-02 | 2025-05-02 | 15FS+1d | 0d |  |
| 17 | 3 | **ประชุมติดตามความคืบหน้าของโครงการ (Weekly)** |  | 96d | 2025-04-16 | 2025-08-27 |  | 5d |  |
| 18 | 3.1 | ประชุมติดตามความคืบหน้าของโครงการ (Weekly) 1 |  | 1d | 2025-04-16 | 2025-04-16 |  | 100d | start no earlier than 2025-04-16 |
| 19 | 3.2 | ประชุมติดตามความคืบหน้าของโครงการ (Weekly) 2 |  | 1d | 2025-04-23 | 2025-04-23 |  | 95d | start no earlier than 2025-04-23 |
| 20 | 3.3 | ประชุมติดตามความคืบหน้าของโครงการ (Weekly) 3 |  | 1d | 2025-04-30 | 2025-04-30 |  | 90d | start no earlier than 2025-04-30 |
| 21 | 3.4 | ประชุมติดตามความคืบหน้าของโครงการ (Weekly) 4 |  | 1d | 2025-05-07 | 2025-05-07 |  | 85d | start no earlier than 2025-05-07 |
| 22 | 3.5 | ประชุมติดตามความคืบหน้าของโครงการ (Weekly) 5 |  | 1d | 2025-05-14 | 2025-05-14 |  | 80d | start no earlier than 2025-05-14 |
| 23 | 3.6 | ประชุมติดตามความคืบหน้าของโครงการ (Weekly) 6 |  | 1d | 2025-05-21 | 2025-05-21 |  | 75d | start no earlier than 2025-05-21 |
| 24 | 3.7 | ประชุมติดตามความคืบหน้าของโครงการ (Weekly) 7 |  | 1d | 2025-05-28 | 2025-05-28 |  | 70d | start no earlier than 2025-05-28 |
| 25 | 3.8 | ประชุมติดตามความคืบหน้าของโครงการ (Weekly) 8 |  | 1d | 2025-06-04 | 2025-06-04 |  | 65d | start no earlier than 2025-06-04 |
| 26 | 3.9 | ประชุมติดตามความคืบหน้าของโครงการ (Weekly) 9 |  | 1d | 2025-06-11 | 2025-06-11 |  | 60d | start no earlier than 2025-06-11 |
| 27 | 3.10 | ประชุมติดตามความคืบหน้าของโครงการ (Weekly) 10 |  | 1d | 2025-06-18 | 2025-06-18 |  | 55d | start no earlier than 2025-06-18 |
| 28 | 3.11 | ประชุมติดตามความคืบหน้าของโครงการ (Weekly) 11 |  | 1d | 2025-06-25 | 2025-06-25 |  | 50d | start no earlier than 2025-06-25 |
| 29 | 3.12 | ประชุมติดตามความคืบหน้าของโครงการ (Weekly) 12 |  | 1d | 2025-07-02 | 2025-07-02 |  | 45d | start no earlier than 2025-07-02 |
| 30 | 3.13 | ประชุมติดตามความคืบหน้าของโครงการ (Weekly) 13 |  | 1d | 2025-07-09 | 2025-07-09 |  | 40d | start no earlier than 2025-07-09 |
| 31 | 3.14 | ประชุมติดตามความคืบหน้าของโครงการ (Weekly) 14 |  | 1d | 2025-07-16 | 2025-07-16 |  | 35d | start no earlier than 2025-07-16 |
| 32 | 3.15 | ประชุมติดตามความคืบหน้าของโครงการ (Weekly) 15 |  | 1d | 2025-07-23 | 2025-07-23 |  | 30d | start no earlier than 2025-07-23 |
| 33 | 3.16 | ประชุมติดตามความคืบหน้าของโครงการ (Weekly) 16 |  | 1d | 2025-07-30 | 2025-07-30 |  | 25d | start no earlier than 2025-07-30 |
| 34 | 3.17 | ประชุมติดตามความคืบหน้าของโครงการ (Weekly) 17 |  | 1d | 2025-08-06 | 2025-08-06 |  | 20d | start no earlier than 2025-08-06 |
| 35 | 3.18 | ประชุมติดตามความคืบหน้าของโครงการ (Weekly) 18 |  | 1d | 2025-08-13 | 2025-08-13 |  | 15d | start no earlier than 2025-08-13 |
| 36 | 3.19 | ประชุมติดตามความคืบหน้าของโครงการ (Weekly) 19 |  | 1d | 2025-08-20 | 2025-08-20 |  | 10d | start no earlier than 2025-08-20 |
| 37 | 3.20 | ประชุมติดตามความคืบหน้าของโครงการ (Weekly) 20 |  | 1d | 2025-08-27 | 2025-08-27 |  | 5d | start no earlier than 2025-08-27 |

| ID | WBS | Task | Duration | Start | Finish | Predecessors | Total slack | Free slack | Constraint |
| --- | --- | --- | --- | --- | --- | --- | --- | --- | --- |
| 38 | 4 | **รายงานความคืบหน้าของโครงการใน Tech.PMO (Monthly)** | 91d | 2025-04-25 | 2025-08-29 |  | 3d |  |  |
| 39 | 4.1 | รายงานความคืบหน้าของโครงการใน Tech.PMO (Monthly) 1 | 1d | 2025-04-25 | 2025-04-25 |  | 93d |  | start no earlier than 2025-04-25 |
| 40 | 4.2 | รายงานความคืบหน้าของโครงการใน Tech.PMO (Monthly) 2 | 1d | 2025-05-30 | 2025-05-30 |  | 68d |  | start no earlier than 2025-05-30 |
| 41 | 4.3 | รายงานความคืบหน้าของโครงการใน Tech.PMO (Monthly) 3 | 1d | 2025-06-27 | 2025-06-27 |  | 48d |  | start no earlier than 2025-06-27 |
| 42 | 4.4 | รายงานความคืบหน้าของโครงการใน Tech.PMO (Monthly) 4 | 1d | 2025-07-25 | 2025-07-25 |  | 28d |  | start no earlier than 2025-07-25 |
| 43 | 4.5 | รายงานความคืบหน้าของโครงการใน Tech.PMO (Monthly) 5 | 1d | 2025-08-29 | 2025-08-29 |  | 3d |  | start no earlier than 2025-08-29 |
| 44 | 5 | **Requirement Gathering** | 8d | 2025-05-06 | 2025-05-15 |  | 0d |  |  |
| 45 | 5.1 | ศึกษากระบวนการทำงานในปัจจุบัน (As Is) | 2d | 2025-05-06 | 2025-05-07 | 16FS+1d | 0d |  |  |
| 46 | 5.2 | ศึกษาปัญหาของการทำงานในปัจจุบัน | 2d | 2025-05-06 | 2025-05-07 | 45SS | 85d |  |  |
| 47 | 5.3 | จัดประชุมสัมภาษณ์ตัวแทนผู้ปฏิบัติงานเพื่อค้นหาความต้องการ (Interview Key Users) | 2d | 2025-05-06 | 2025-05-07 | 45SS | 0d |  |  |
| 48 | 5.4 | สรุปจัดทำรายละเอียดความต้องการ (Develop Requirement Specification) | 1d | 2025-05-08 | 2025-05-08 | 47 | 0d |  |  |
| 49 | 5.5 | ประชุมกับ User เพื่อสรุปยืนยัน Requirement | 1d | 2025-05-09 | 2025-05-09 | 48 | 0d |  |  |
| 50 | 5.6 | แก้ไขเอกสาร Requirement Specification #ครั้งที่ 1 | 1d | 2025-05-13 | 2025-05-13 | 49FS+1d | 0d |  |  |
| 51 | 5.7 | อนุมัติและยืนยัน Requirement Specification (Milestone #3) | 1d | 2025-05-14 | 2025-05-14 | 50 | 0d |  |  |
| 52 | 5.8 | กำหนดระยะเวลาการเก็บรักษาข้อมูล (Data Retention) | 1d | 2025-05-14 | 2025-05-14 | 51SS | 0d |  |  |
| 53 | 5.9 | อนุมัติและยืนยัน Data Retention Sign-Off Form (Milestone #4) | 1d | 2025-05-15 | 2025-05-15 | 52 | 0d |  |  |
| 54 | 6 | **Design** | 17d | 2025-05-16 | 2025-06-09 |  | 1d |  |  |
| 55 | 6.1 | ออกแบบสถาปัตยกรรมระบบ (Solution Architecture) | 2d | 2025-05-16 | 2025-05-19 | 53 | 76d | 0d |  |
| 56 | 6.2 | ออกแบบ Data Flow ของระบบงาน | 2d | 2025-05-16 | 2025-05-19 | 55SS | 77d |  |  |
| 57 | 6.3 | ออกแบบโครงสร้างฐานข้อมูล (DB Structure and Schema) | 3d | 2025-05-16 | 2025-05-20 | 55SS | 76d |  |  |
| 58 | 6.4 | Business process management and Business process risk management training for User | 1d | 2025-05-19 | 2025-05-19 | 53FS+1d | 0d |  |  |
| 59 | 6.5 | จัดทำเอกสาร Business process risk management | 5d | 2025-05-20 | 2025-05-26 | 58 | 0d |  |  |
| 60 | 6.6 | ส่งมอบเอกสาร Business process risk management และเอกสารที่เกี่ยวข้อง (Milestone #5) | 1d | 2025-05-27 | 2025-05-27 | 59 | 0d |  |  |
| 61 | 6.7 | **กลุ่มงาน IT** | 1d | 2025-05-28 | 2025-05-28 |  | 0d |  |  |
| 62 | 6.7.1 | ออกแบบแบบฟอร์มการประเมินคุณภาพการส่งมอบสินค้า/บริการ (For IT User) | 1d | 2025-05-28 | 2025-05-28 | 60 | 0d |  |  |

| ID | WBS | Task | Duration | Start | Finish | Predecessors | Total slack | Free slack |
| --- | --- | --- | --- | --- | --- | --- | --- | --- |
| 63 | 6.8 | **กลุ่มงาน WASTE** | 1d | 2025-05-28 | 2025-05-28 |  | 70d |  |
| 64 | 6.8.1 | ออกแบบแบบฟอร์มการประเมินคุณภาพการส่งมอบสินค้า/บริการ WASTE | 1d | 2025-05-28 | 2025-05-28 | 62SS | 70d |  |
| 65 | 6.9 | **กลุ่มงาน Logistic** | 1d | 2025-05-28 | 2025-05-28 |  | 70d |  |
| 66 | 6.9.1 | ออกแบบแบบฟอร์มการประเมินคุณภาพการส่งมอบสินค้า/บริการ Vendor-N (G.Logistics) | 1d | 2025-05-28 | 2025-05-28 | 62SS | 70d |  |
| 67 | 6.10 | **กลุ่มงาน Manufacturing** | 1d | 2025-05-28 | 2025-05-28 |  | 70d |  |
| 68 | 6.10.1 | ออกแบบแบบฟอร์มการประเมินคุณภาพการส่งมอบสินค้า/บริการ Manufacturing_N | 1d | 2025-05-28 | 2025-05-28 | 62SS | 70d |  |
| 69 | 6.11 | **กลุ่มงาน Commercial** | 1d | 2025-05-28 | 2025-05-28 |  | 0d |  |
| 70 | 6.11.1 | ออกแบบแบบฟอร์มการประเมินคุณภาพการส่งมอบสินค้า/บริการ Commercial | 1d | 2025-05-28 | 2025-05-28 | 62SS | 70d |  |
| 71 | 6.11.2 | ออกแบบแบบฟอร์มการประเมินคุณภาพการส่งมอบสินค้า/บริการ (Outsource) | 1d | 2025-05-28 | 2025-05-28 | 62SS | 0d |  |
| 72 | 6.12 | **กลุ่มงาน Raw material** | 1d | 2025-05-29 | 2025-05-29 |  | 0d |  |
| 73 | 6.12.1 | ออกแบบแบบฟอร์มการประเมินคุณภาพการส่งมอบสินค้า/บริการ (RAW MATERIAL) | 1d | 2025-05-29 | 2025-05-29 | 71 | 0d |  |
| 74 | 6.13 | **กลุ่มงาน Packaging** | 1d | 2025-05-29 | 2025-05-29 |  | 0d |  |
| 75 | 6.13.1 | ออกแบบแบบฟอร์มการประเมินคุณภาพการส่งมอบสินค้า/บริการ (PKG) | 1d | 2025-05-29 | 2025-05-29 | 73SS | 0d |  |
| 76 | 6.14 | **กลุ่มงาน Agile** | 1d | 2025-05-30 | 2025-05-30 |  | 0d |  |
| 77 | 6.14.1 | ออกแบบแบบฟอร์มการประเมินคุณภาพการส่งมอบสินค้า/บริการ (AGILE) | 1d | 2025-05-30 | 2025-05-30 | 75 | 0d |  |
| 78 | 6.15 | **กลุ่มงาน Property** | 1d | 2025-05-30 | 2025-05-30 |  | 68d |  |
| 79 | 6.15.1 | ออกแบบแบบฟอร์มการประเมินคุณภาพการส่งมอบสินค้า/บริการ (PROPERTY) | 1d | 2025-05-30 | 2025-05-30 | 77SS | 68d |  |
| 80 | 6.16 | **กลุ่มงาน Energy and Chemical** | 1d | 2025-05-30 | 2025-05-30 |  | 0d |  |
| 81 | 6.16.1 | ออกแบบแบบฟอร์มการประเมินคุณภาพการส่งมอบสินค้า/บริการ (ENERGY_CHEMICAL) | 1d | 2025-05-30 | 2025-05-30 | 77SS | 0d |  |
| 82 | 6.17 | จัดทำรายละเอียดการออกแบบระบบ (Design Specification) | 3d | 2025-06-02 | 2025-06-04 | 81 | 0d |  |
| 83 | 6.18 | ประชุมกับ Key User เพื่อสรุปยืนยัน Design Specification | 1d | 2025-06-05 | 2025-06-05 | 82 | 0d |  |
| 84 | 6.19 | Key User ตรวจสอบยืนยัน Design Specification | 1d | 2025-06-06 | 2025-06-06 | 83 | 0d |  |
| 85 | 6.20 | อนุมัติและยืนยัน Design Specification (Milestone #6) | 1d | 2025-06-09 | 2025-06-09 | 84 | 0d |  |
| 86 | 7 | **Implementation & UT** | 28d | 2025-06-10 | 2025-07-17 |  | 0d |  |
| 87 | 7.1 | **พัฒนาแบบประเมินบน Microsoft Form** | 2d | 2025-06-10 | 2025-06-11 |  | 0d |  |
| 88 | 7.1.1 | **กลุ่มงาน IT** | 1d | 2025-06-10 | 2025-06-10 |  | 0d |  |
| 89 | 7.1.1.1 | พัฒนาแบบฟอร์มการประเมินคุณภาพการส่งมอบสินค้า/บริการ (For IT User) | 1d | 2025-06-10 | 2025-06-10 | 85 | 0d |  |
| 90 | 7.1.1.2 | ทดสอบแบบฟอร์มการประเมินคุณภาพการส่งมอบสินค้า/บริการ (For IT User) | 1d | 2025-06-10 | 2025-06-10 | 89SS | 60d | 0d |

| ID | WBS | Task | Duration | Start | Finish | Predecessors | Total slack | Free slack |
| --- | --- | --- | --- | --- | --- | --- | --- | --- |
| 91 | 7.1.2 | **กลุ่มงาน WASTE** | 1d | 2025-06-10 | 2025-06-10 |  | 61d |  |
| 92 | 7.1.2.1 | พัฒนาแบบฟอร์มการประเมินคุณภาพการส่งมอบสินค้า/บริการ WASTE | 1d | 2025-06-10 | 2025-06-10 | 89SS | 61d |  |
| 93 | 7.1.2.2 | ทดสอบแบบฟอร์มการประเมินคุณภาพการส่งมอบสินค้า/บริการ (For IT User) | 1d | 2025-06-10 | 2025-06-10 | 89SS | 61d |  |
| 94 | 7.1.3 | **กลุ่มงาน Logistic** | 1d | 2025-06-10 | 2025-06-10 |  | 61d |  |
| 95 | 7.1.3.1 | พัฒนาแบบฟอร์มการประเมินคุณภาพการส่งมอบสินค้า/บริการ Vendor-N (G.Logistics) | 1d | 2025-06-10 | 2025-06-10 | 89SS | 61d |  |
| 96 | 7.1.3.2 | ทดสอบแบบฟอร์มการประเมินคุณภาพการส่งมอบสินค้า/บริการ Vendor-N (G.Logistics) | 1d | 2025-06-10 | 2025-06-10 | 89SS | 61d |  |
| 97 | 7.1.4 | **กลุ่มงาน Manufacturing** | 1d | 2025-06-10 | 2025-06-10 |  | 61d |  |
| 98 | 7.1.4.1 | พัฒนาแบบฟอร์มการประเมินคุณภาพการส่งมอบสินค้า/บริการ Manufacturing_N | 1d | 2025-06-10 | 2025-06-10 | 89SS | 61d |  |
| 99 | 7.1.4.2 | ทดสอบแบบฟอร์มการประเมินคุณภาพการส่งมอบสินค้า/บริการ Manufacturing_N | 1d | 2025-06-10 | 2025-06-10 | 89SS | 61d |  |
| 100 | 7.1.5 | **กลุ่มงาน Commercial** | 1d | 2025-06-10 | 2025-06-10 |  | 0d |  |
| 101 | 7.1.5.1 | พัฒนาแบบฟอร์มการประเมินคุณภาพการส่งมอบสินค้า/บริการ Commercial | 1d | 2025-06-10 | 2025-06-10 | 89SS | 61d |  |
| 102 | 7.1.5.2 | ทดสอบแบบฟอร์มการประเมินคุณภาพการส่งมอบสินค้า/บริการ Commercial | 1d | 2025-06-10 | 2025-06-10 | 89SS | 61d |  |
| 103 | 7.1.5.3 | พัฒนาแบบฟอร์มการประเมินคุณภาพการส่งมอบสินค้า/บริการ (Outsource) | 1d | 2025-06-10 | 2025-06-10 | 89SS | 61d |  |
| 104 | 7.1.5.4 | ทดสอบแบบฟอร์มการประเมินคุณภาพการส่งมอบสินค้า/บริการ (Outsource) | 1d | 2025-06-10 | 2025-06-10 | 89SS | 0d |  |
| 105 | 7.1.6 | **กลุ่มงาน Raw material** | 1d | 2025-06-11 | 2025-06-11 |  | 0d |  |
| 106 | 7.1.6.1 | พัฒนาแบบฟอร์มการประเมินคุณภาพการส่งมอบสินค้า/บริการ RAW MATERIAL | 1d | 2025-06-11 | 2025-06-11 | 104 | 0d |  |
| 107 | 7.1.6.2 | ทดสอบแบบฟอร์มการประเมินคุณภาพการส่งมอบสินค้า/บริการ RAW MATERIAL | 1d | 2025-06-11 | 2025-06-11 | 106SS | 36d | 0d |
| 108 | 7.1.7 | **กลุ่มงาน Packaging** | 1d | 2025-06-11 | 2025-06-11 |  | 60d |  |
| 109 | 7.1.7.1 | พัฒนาแบบฟอร์มการประเมินคุณภาพการส่งมอบสินค้า/บริการ PKG | 1d | 2025-06-11 | 2025-06-11 | 106SS | 60d |  |
| 110 | 7.1.7.2 | ทดสอบแบบฟอร์มการประเมินคุณภาพการส่งมอบสินค้า/บริการ PKG | 1d | 2025-06-11 | 2025-06-11 | 106SS | 60d |  |
| 111 | 7.1.8 | **กลุ่มงาน Agile** | 1d | 2025-06-11 | 2025-06-11 |  | 60d |  |
| 112 | 7.1.8.1 | พัฒนาแบบฟอร์มการประเมินคุณภาพการส่งมอบสินค้า/บริการ AGILE | 1d | 2025-06-11 | 2025-06-11 | 106SS | 60d |  |
| 113 | 7.1.8.2 | ทดสอบแบบฟอร์มการประเมินคุณภาพการส่งมอบสินค้า/บริการ AGILE | 1d | 2025-06-11 | 2025-06-11 | 106SS | 60d |  |
| 114 | 7.1.9 | **กลุ่มงาน Property** | 1d | 2025-06-11 | 2025-06-11 |  | 60d |  |
| 115 | 7.1.9.1 | พัฒนาแบบฟอร์มการประเมินคุณภาพการส่งมอบสินค้า/บริการ PROPERTY | 1d | 2025-06-11 | 2025-06-11 | 106SS | 60d |  |
| 116 | 7.1.9.2 | ทดสอบแบบฟอร์มการประเมินคุณภาพการส่งมอบสินค้า/บริการ PROPERTY | 1d | 2025-06-11 | 2025-06-11 | 106SS | 60d |  |

| ID | WBS | Task | Duration | Start | Finish | Predecessors | Total slack | Free slack |
| --- | --- | --- | --- | --- | --- | --- | --- | --- |
| 117 | 7.1.10 | **กลุ่มงาน Energy and Chemical** | 1d | 2025-06-11 | 2025-06-11 |  | 0d |  |
| 118 | 7.1.10.1 | พัฒนาแบบฟอร์มการประเมินคุณภาพการส่งมอบสินค้า/บริการ ENERGY_CHEMICAL | 1d | 2025-06-11 | 2025-06-11 | 106SS | 60d |  |
| 119 | 7.1.10.2 | ทดสอบแบบฟอร์มการประเมินคุณภาพการส่งมอบสินค้า/บริการ ENERGY_CHEMICAL | 1d | 2025-06-11 | 2025-06-11 | 106SS | 0d |  |
| 120 | 7.2 | **พัฒนาแบบประเมินของกลุ่มงาน IT** | 1d | 2025-06-11 | 2025-06-11 |  | 60d |  |
| 121 | 7.2.1 | พัฒนา Flow แบบประเมินคุณภาพการส่งมอบสินค้า/บริการ (For IT User) บน Power Automate | 1d | 2025-06-11 | 2025-06-11 | 90 | 60d | 0d |
| 122 | 7.2.2 | ทดสอบการเชื่อมต่อระหว่าง Microsoft Form และ Power Automate | 1d | 2025-06-11 | 2025-06-11 | 121SS | 60d |  |
| 123 | 7.2.3 | พัฒนา List สำหรับจัดเก็บข้อมูลแบบประเมินคุณภาพการส่งมอบสินค้า/บริการ (For IT User) บน Sharepoint | 1d | 2025-06-11 | 2025-06-11 | 121SS | 60d |  |
| 124 | 7.2.4 | ทดสอบการเชื่อมต่อระหว่าง Microsoft Form ,Power Automate และ Sharepoint List | 1d | 2025-06-11 | 2025-06-11 | 121SS | 60d |  |
| 125 | 7.3 | **พัฒนาแบบประเมินของกลุ่มงาน WASTE** | 1d | 2025-06-11 | 2025-06-11 |  | 60d |  |
| 126 | 7.3.1 | พัฒนา Flow แบบประเมินคุณภาพการส่งมอบสินค้า/บริการ WASTE บน Power Automate | 1d | 2025-06-11 | 2025-06-11 | 121SS | 60d |  |
| 127 | 7.3.2 | ทดสอบการเชื่อมต่อระหว่าง Microsoft Form และ Power Automate | 1d | 2025-06-11 | 2025-06-11 | 121SS | 60d |  |
| 128 | 7.3.3 | พัฒนา List สำหรับจัดเก็บข้อมูลแบบประเมินคุณภาพการส่งมอบสินค้า/บริการ WASTE บน Sharepoint | 1d | 2025-06-11 | 2025-06-11 | 121SS | 60d |  |
| 129 | 7.3.4 | ทดสอบการเชื่อมต่อระหว่าง Microsoft Form ,Power Automate และ Sharepoint List | 1d | 2025-06-11 | 2025-06-11 | 121SS | 60d |  |
| 130 | 7.4 | **พัฒนาแบบประเมินของกลุ่มงาน Logistic** | 1d | 2025-06-11 | 2025-06-11 |  | 60d |  |
| 131 | 7.4.1 | พัฒนา Flow แบบประเมินคุณภาพการส่งมอบสินค้า/บริการ Vendor-N (G.Logistics) บน Power Automate | 1d | 2025-06-11 | 2025-06-11 | 121SS | 60d |  |
| 132 | 7.4.2 | ทดสอบการเชื่อมต่อระหว่าง Microsoft Form และ Power Automate | 1d | 2025-06-11 | 2025-06-11 | 121SS | 60d |  |
| 133 | 7.4.3 | พัฒนา List สำหรับจัดเก็บข้อมูลแบบประเมินคุณภาพการส่งมอบสินค้า/บริการ Vendor-N (G.Logistics) บน Sharepoint | 1d | 2025-06-11 | 2025-06-11 | 121SS | 60d |  |
| 134 | 7.4.4 | ทดสอบการเชื่อมต่อระหว่าง Microsoft Form ,Power Automate และ Sharepoint List | 1d | 2025-06-11 | 2025-06-11 | 121SS | 60d |  |
| 135 | 7.5 | **พัฒนาแบบประเมินของกลุ่มงาน Manufaturing** | 1d | 2025-06-11 | 2025-06-11 |  | 60d |  |
| 136 | 7.5.1 | พัฒนา Flow แบบประเมินคุณภาพการส่งมอบสินค้า/บริการ Manufacturing_N บน Power Automate | 1d | 2025-06-11 | 2025-06-11 | 121SS | 60d |  |
| 137 | 7.5.2 | ทดสอบการเชื่อมต่อระหว่าง Microsoft Form และ Power Automate | 1d | 2025-06-11 | 2025-06-11 | 121SS | 60d |  |
| 138 | 7.5.3 | พัฒนา List สำหรับจัดเก็บข้อมูลแบบประเมินคุณภาพการส่งมอบสินค้า/บริการ Manufacturing_N บน Sharepoint | 1d | 2025-06-11 | 2025-06-11 | 121SS | 60d |  |
| 139 | 7.5.4 | ทดสอบการเชื่อมต่อระหว่าง Microsoft Form ,Power Automate และ Sharepoint List | 1d | 2025-06-11 | 2025-06-11 | 121SS | 60d |  |
| 140 | 7.6 | **พัฒนาแบบประเมินของกลุ่มงาน Commercial** | 1d | 2025-06-11 | 2025-06-11 |  | 60d |  |
| 141 | 7.6.1 | **Commercial** | 1d | 2025-06-11 | 2025-06-11 |  | 60d |  |
| 142 | 7.6.1.1 | พัฒนา Flow แบบประเมินคุณภาพการส่งมอบสินค้า/บริการ Commercial บน Power Automate | 1d | 2025-06-11 | 2025-06-11 | 121SS | 60d |  |
| 143 | 7.6.1.2 | ทดสอบการเชื่อมต่อระหว่าง Microsoft Form และ Power Automate | 1d | 2025-06-11 | 2025-06-11 | 121SS | 60d |  |
| 144 | 7.6.1.3 | พัฒนา List สำหรับจัดเก็บข้อมูลแบบประเมินคุณภาพการส่งมอบสินค้า/บริการ Commercial บน Sharepoint | 1d | 2025-06-11 | 2025-06-11 | 121SS | 60d |  |
| 145 | 7.6.1.4 | ทดสอบการเชื่อมต่อระหว่าง Microsoft Form ,Power Automate และ Sharepoint List | 1d | 2025-06-11 | 2025-06-11 | 121SS | 60d |  |

| ID | WBS | Task | Duration | Start | Finish | Predecessors | Total slack | Free slack |
| --- | --- | --- | --- | --- | --- | --- | --- | --- |
| 146 | 7.6.2 | **Outsource** | 1d | 2025-06-11 | 2025-06-11 |  | 60d |  |
| 147 | 7.6.2.1 | พัฒนา Flow แบบประเมินคุณภาพการส่งมอบสินค้า/บริการ (Outsource) บน Power Automate | 1d | 2025-06-11 | 2025-06-11 | 121SS | 60d |  |
| 148 | 7.6.2.2 | ทดสอบการเชื่อมต่อระหว่าง Microsoft Form และ Power Automate | 1d | 2025-06-11 | 2025-06-11 | 121SS | 60d |  |
| 149 | 7.6.2.3 | พัฒนา List สำหรับจัดเก็บข้อมูลแบบประเมินคุณภาพการส่งมอบสินค้า/บริการ (Outsource) บน Sharepoint | 1d | 2025-06-11 | 2025-06-11 | 121SS | 60d |  |
| 150 | 7.6.2.4 | ทดสอบการเชื่อมต่อระหว่าง Microsoft Form ,Power Automate และ Sharepoint List | 1d | 2025-06-11 | 2025-06-11 | 121SS | 60d |  |
| 151 | 7.7 | **พัฒนาแบบประเมินของกลุ่มงาน Raw material** | 1d | 2025-06-12 | 2025-06-12 |  | 36d |  |
| 152 | 7.7.1 | พัฒนา Flow แบบประเมินคุณภาพการส่งมอบสินค้า/บริการ RAW MATERIAL บน Power Automate | 1d | 2025-06-12 | 2025-06-12 | 107 | 36d | 0d |
| 153 | 7.7.2 | ทดสอบการเชื่อมต่อระหว่าง Microsoft Form และ Power Automate | 1d | 2025-06-12 | 2025-06-12 | 152SS | 59d |  |
| 154 | 7.7.3 | พัฒนา List สำหรับจัดเก็บข้อมูลแบบประเมินคุณภาพการส่งมอบสินค้า/บริการ RAW MATERIAL บน Sharepoint | 1d | 2025-06-12 | 2025-06-12 | 152SS | 59d |  |
| 155 | 7.7.4 | ทดสอบการเชื่อมต่อระหว่าง Microsoft Form ,Power Automate และ Sharepoint List | 1d | 2025-06-12 | 2025-06-12 | 152SS | 59d |  |
| 156 | 7.8 | **พัฒนาแบบประเมินของกลุ่มงาน Packaging** | 1d | 2025-06-12 | 2025-06-12 |  | 59d |  |
| 157 | 7.8.1 | พัฒนา Flow แบบประเมินคุณภาพการส่งมอบสินค้า/บริการ PKG บน Power Automate | 1d | 2025-06-12 | 2025-06-12 | 152SS | 59d |  |
| 158 | 7.8.2 | ทดสอบการเชื่อมต่อระหว่าง Microsoft Form และ Power Automate | 1d | 2025-06-12 | 2025-06-12 | 152SS | 59d |  |
| 159 | 7.8.3 | พัฒนา List สำหรับจัดเก็บข้อมูลแบบประเมินคุณภาพการส่งมอบสินค้า/บริการ PKG บน Sharepoint | 1d | 2025-06-12 | 2025-06-12 | 152SS | 59d |  |
| 160 | 7.8.4 | ทดสอบการเชื่อมต่อระหว่าง Microsoft Form ,Power Automate และ Sharepoint List | 1d | 2025-06-12 | 2025-06-12 | 152SS | 59d |  |
| 161 | 7.9 | **พัฒนาแบบประเมินของกลุ่มงาน Agile** | 1d | 2025-06-12 | 2025-06-12 |  | 59d |  |
| 162 | 7.9.1 | พัฒนา Flow แบบประเมินคุณภาพการส่งมอบสินค้า/บริการ AGILE บน Power Automate | 1d | 2025-06-12 | 2025-06-12 | 152SS | 59d |  |
| 163 | 7.9.2 | ทดสอบการเชื่อมต่อระหว่าง Microsoft Form และ Power Automate | 1d | 2025-06-12 | 2025-06-12 | 152SS | 59d |  |
| 164 | 7.9.3 | พัฒนา List สำหรับจัดเก็บข้อมูลแบบประเมินคุณภาพการส่งมอบสินค้า/บริการ AGILE บน Sharepoint | 1d | 2025-06-12 | 2025-06-12 | 152SS | 59d |  |
| 165 | 7.9.4 | ทดสอบการเชื่อมต่อระหว่าง Microsoft Form ,Power Automate และ Sharepoint List | 1d | 2025-06-12 | 2025-06-12 | 152SS | 59d |  |
| 166 | 7.10 | **พัฒนาแบบประเมินของกลุ่มงาน Property** | 1d | 2025-06-12 | 2025-06-12 |  | 59d |  |
| 167 | 7.10.1 | พัฒนา Flow แบบประเมินคุณภาพการส่งมอบสินค้า/บริการ PROPERTY บน Power Automate | 1d | 2025-06-12 | 2025-06-12 | 152SS | 59d |  |
| 168 | 7.10.2 | ทดสอบการเชื่อมต่อระหว่าง Microsoft Form และ Power Automate | 1d | 2025-06-12 | 2025-06-12 | 152SS | 59d |  |
| 169 | 7.10.3 | พัฒนา List สำหรับจัดเก็บข้อมูลแบบประเมินคุณภาพการส่งมอบสินค้า/บริการ PROPERTY บน Sharepoint | 1d | 2025-06-12 | 2025-06-12 | 152SS | 59d |  |
| 170 | 7.10.4 | ทดสอบการเชื่อมต่อระหว่าง Microsoft Form ,Power Automate และ Sharepoint List | 1d | 2025-06-12 | 2025-06-12 | 152SS | 59d |  |

| ID | WBS | Task | Duration | Start | Finish | Predecessors | Total slack | Free slack |
| --- | --- | --- | --- | --- | --- | --- | --- | --- |
| 171 | 7.11 | **พัฒนาแบบประเมินของกลุ่มงาน Energy and Chemical** | 1d | 2025-06-12 | 2025-06-12 |  | 36d |  |
| 172 | 7.11.1 | พัฒนา Flow แบบประเมินคุณภาพการส่งมอบสินค้า/บริการ ENERGY_CHEMICAL บน Power Automate | 1d | 2025-06-12 | 2025-06-12 | 152SS | 59d |  |
| 173 | 7.11.2 | ทดสอบการเชื่อมต่อระหว่าง Microsoft Form และ Power Automate | 1d | 2025-06-12 | 2025-06-12 | 152SS | 59d |  |
| 174 | 7.11.3 | พัฒนา List สำหรับจัดเก็บข้อมูลแบบประเมินคุณภาพการส่งมอบสินค้า/บริการ ENERGY_CHEMICAL บน Sharepoint | 1d | 2025-06-12 | 2025-06-12 | 152SS | 59d |  |
| 175 | 7.11.4 | ทดสอบการเชื่อมต่อระหว่าง Microsoft Form ,Power Automate และ Sharepoint List | 1d | 2025-06-12 | 2025-06-12 | 152SS | 36d | 0d |
| 176 | 7.12 | พัฒนาโปรแกรมสำหรับดึงข้อมูลจาก Sharepoint List เก็บลง Database | 2d | 2025-06-13 | 2025-06-16 | 175 | 36d | 0d |
| 177 | 7.13 | ทดสอบการเชื่อมต่อโปรแกรมระหว่าง Sharepoint List และ Database | 2d | 2025-06-17 | 2025-06-18 | 176 | 36d | 0d |
| 178 | 7.14 | พัฒนา Model ใช้สำหรับนำไปแสดงผลรายงาน | 14d | 2025-06-19 | 2025-07-08 | 177 | 36d | 0d |
| 179 | 7.15 | พัฒนา Dashboard | 5d | 2025-07-09 | 2025-07-15 | 178 | 36d |  |
| 180 | 7.16 | **จัดทำ Draft Process flow และเอกสารที่เกี่ยวข้อง รองรับกระบวนการใหม่** | 22d | 2025-06-17 | 2025-07-16 |  | 0d |  |
| 181 | 7.16.1 | จัดทำเอกสาร Business Process Flow | 16d | 2025-06-17 | 2025-07-08 | 119FS+3d | 0d |  |
| 182 | 7.16.2 | ส่งมอบ UPM Sign-off และ Draf of ARIS Flow ให้กับหน่วยงาน BPM | 3d | 2025-07-09 | 2025-07-11 | 181 | 0d |  |
| 183 | 7.16.3 | จัดเก็บเอกสารเข้าระบบ ISO และส่งมอบเอกสารให้หน่วยงาน BPM | 2d | 2025-07-14 | 2025-07-15 | 182 | 0d |  |
| 184 | 7.16.4 | ส่งมอบBPM Sign-off Draft Process Flow และเอกสารที่เกี่ยวข้อง (Milestone #7) | 1d | 2025-07-16 | 2025-07-16 | 183 | 0d |  |
| 185 | 7.17 | ส่งมอบระบบงานที่พัฒนาเรียบร้อยแล้ว (Milestone #8) | 1d | 2025-07-17 | 2025-07-17 | 184 | 0d |  |
| 186 | 8 | **Test And Trainning Key User** | 11d | 2025-07-18 | 2025-08-01 |  | 0d |  |
| 187 | 8.1 | จัดเตรียม Environment Test | 1d | 2025-07-18 | 2025-07-18 | 185 | 0d |  |
| 188 | 8.2 | จัดทำเอกสารการฝึกอบรมสำหรับ Key User (Trainng Document) | 1d | 2025-07-21 | 2025-07-21 | 187 | 0d |  |
| 189 | 8.3 | ดำเนินการทดสอบ UAT และ Training | 6d | 2025-07-22 | 2025-07-29 | 188 | 0d |  |
| 190 | 8.4 | แก้ไข Defect จาก UAT | 2d | 2025-07-30 | 2025-07-31 | 189 | 0d |  |
| 191 | 8.5 | UAT Sign-off (Milestone #9) | 1d | 2025-08-01 | 2025-08-01 | 190 | 0d |  |
| 192 | 9 | **Deploy** | 3d | 2025-08-04 | 2025-08-06 |  | 0d |  |
| 193 | 9.1 | จัดทำแผน Go-Live Plan | 1d | 2025-08-04 | 2025-08-04 | 191 | 0d |  |
| 194 | 9.2 | ตรวจสอบความพร้อมในการ Go-Live (Go/No-Go Checklist) | 1d | 2025-08-05 | 2025-08-05 | 193 | 0d |  |
| 195 | 9.3 | ดำเนินการ Go-Live(Milestone #10) | 1d | 2025-08-06 | 2025-08-06 | 194 | 0d |  |

| ID | WBS | Task | Duration | Start | Finish | Predecessors | Total slack |
| --- | --- | --- | --- | --- | --- | --- | --- |
| 196 | 10 | **Stabilization** | 15d | 2025-08-07 | 2025-08-27 |  | 0d |
| 197 | 10.1 | สนับสนุนการใช้งาน หลัง Go-Live (หลังจบโครงการ 1 Month) | 15d | 2025-08-07 | 2025-08-27 | 195 | 0d |
| 198 | 10.2 | เก็บ Issues Log บน ระบบจริงที่ใช้งาน และแก้ไข | 15d | 2025-08-07 | 2025-08-27 | 197SS | 0d |
| 199 | 11 | **Project Closure** | 5d | 2025-08-28 | 2025-09-03 |  | 0d |
| 200 | 11.1 | จัดทำ Lesson Learned โครงการ | 1d | 2025-08-28 | 2025-08-28 | 198 | 0d |
| 201 | 11.2 | ส่งมอบโครงการ สู่งานประจำ (Handover) | 1d | 2025-08-29 | 2025-08-29 | 200 | 0d |
| 202 | 11.3 | จัดเก็บเอกสาร Project Files ทั้งหมด | 1d | 2025-09-01 | 2025-09-01 | 201 | 0d |
| 203 | 11.4 | กำหนดระยะเวลาในการวัด Outcome ของโครงการ (Project KPI) | 1d | 2025-09-02 | 2025-09-02 | 202 | 0d |
| 204 | 11.5 | ดำเนินการปิดโครงการ (Milestone #11) | 1d | 2025-09-03 | 2025-09-03 | 203 | 0d |
