# Vendor Evaluation

Schedule from MS Project, 2025-04-15 to 2025-09-03, status date 2025-05-13, A marks actual dates.

## Calendars

- Standard: Mon-Fri 08:00-12:00, 13:00-17:00; Sat-Sun off.

## Resources

| Resource |
| --- |
| Tanchanok |
| Sutripat |
| Aunchala |
| Chakhrit |
| Krittalak |
| Taravit |
| Pornpun |
| Junjeera |

## Schedule

| ID | WBS | Task | Type | Duration | Start | Finish | Predecessors | Complete | Remaining | Total slack | Constraint | Resources | Work | Actual work | Percent Plan |
| --- | --- | --- | --- | --- | --- | --- | --- | --- | --- | --- | --- | --- | --- | --- | --- |
| 1 | 1 | **Milestones** |  | 90d | 2025-04-30 A | 2025-09-03 |  |  | 90d | 0d |  |  |  |  | 0% |
| 2 | 1.1 | เสนอ Project Charter ให้ผู้บริหารอนุมัติ (Milestone #1) | milestone | 0d | 2025-04-30 A | 2025-04-30 A | 15 | 100% |  |  |  |  |  |  | 100% |
| 3 | 1.2 | ประชุม Kick off โครงการ เพื่อสื่อสารแผนงานโครงการ (Milestone #2) | milestone | 0d | 2025-05-02 A | 2025-05-02 A | 16 | 100% |  |  |  |  |  |  | 100% |
| 4 | 1.3 | อนุมัติและยืนยัน Requirement Specification (Milestone #3) | milestone | 0d | 2025-05-14 | 2025-05-14 | 51 |  |  | 80d |  |  |  |  | 0% |
| 5 | 1.4 | อนุมัติและยืนยัน Data Retention Sign-Off Form (Milestone #4) | milestone | 0d | 2025-05-15 | 2025-05-15 | 53 |  |  | 79d |  |  |  |  | 0% |
| 6 | 1.5 | ส่งมอบเอกสาร Business process risk management และเอกสารที่เกี่ยวข้อง (Milestone #5) | milestone | 0d | 2025-06-09 | 2025-06-09 | 60 |  |  | 62d |  |  |  |  | 0% |
| 7 | 1.6 | อนุมัติและยืนยัน Design Specification (Milestone #6) | milestone | 0d | 2025-06-09 | 2025-06-09 | 86 |  |  | 62d |  |  |  |  | 0% |
| 8 | 1.7 | ส่งมอบBPM Sign-off Draft Process Flow และเอกสารที่เกี่ยวข้อง (Milestone #7) | milestone | 0d | 2025-07-16 | 2025-07-16 | 185 |  |  | 35d |  |  |  |  | 0% |
| 9 | 1.8 | ส่งมอบระบบงานที่พัฒนาเรียบร้อยแล้ว (Milestone #8) | milestone | 0d | 2025-07-17 | 2025-07-17 | 186 |  |  | 34d |  |  |  |  | 0% |
| 10 | 1.9 | UAT Sign-off (Milestone #9) | milestone | 0d | 2025-08-01 | 2025-08-01 | 192 |  |  | 23d |  |  |  |  | 0% |
| 11 | 1.10 | ดำเนินการ Go-Live(Milestone #10) | milestone | 0d | 2025-08-06 | 2025-08-06 | 196 |  |  | 20d |  |  |  |  | 0% |
| 12 | 1.11 | ดำเนินการปิดโครงการ (Milestone #11) | milestone | 0d | 2025-09-03 | 2025-09-03 | 205 |  |  | 0d |  |  |  |  | 0% |
| 13 | 2 | **Project Preparation** |  | 14d | 2025-04-15 A | 2025-05-02 A |  | 100% |  |  |  |  | 208h | 208h | 100% |
| 14 | 2.1 | จัดทำ Project Charter |  | 11d | 2025-04-15 A | 2025-04-29 A |  | 100% |  |  |  | Aunchala; Sutripat | 176h | 176h | 100% |
| 15 | 2.2 | เสนอ Project Charter ให้ผู้บริหารอนุมัติ (Milestone #1) |  | 1d | 2025-04-30 A | 2025-04-30 A | 14 | 100% |  |  |  | Aunchala; Sutripat | 16h | 16h | 100% |
| 16 | 2.3 | ประชุม Kick off โครงการ เพื่อสื่อสารแผนงานโครงการ (Milestone #2) |  | 1d | 2025-05-02 A | 2025-05-02 A | 15FS+1d | 100% |  |  |  | Aunchala; Sutripat | 16h | 16h | 100% |
| 17 | 3 | **ประชุมติดตามความคืบหน้าของโครงการ (Weekly)** |  | 96d | 2025-04-16 A | 2025-08-27 |  | 20% | 76.8d | 5d |  |  |  |  | 20% |
| 18 | 3.1 | ประชุมติดตามความคืบหน้าของโครงการ (Weekly) 1 |  | 1d | 2025-04-16 A | 2025-04-16 A |  | 100% |  |  | start no earlier than 2025-04-16 |  |  |  | 100% |
| 19 | 3.2 | ประชุมติดตามความคืบหน้าของโครงการ (Weekly) 2 |  | 1d | 2025-04-23 A | 2025-04-23 A |  | 100% |  |  | start no earlier than 2025-04-23 |  |  |  | 100% |
| 20 | 3.3 | ประชุมติดตามความคืบหน้าของโครงการ (Weekly) 3 |  | 1d | 2025-04-30 A | 2025-04-30 A |  | 100% |  |  | start no earlier than 2025-04-30 |  |  |  | 100% |
| 21 | 3.4 | ประชุมติดตามความคืบหน้าของโครงการ (Weekly) 4 |  | 1d | 2025-05-07 A | 2025-05-07 A |  | 100% |  |  | start no earlier than 2025-05-07 |  |  |  | 100% |
| 22 | 3.5 | ประชุมติดตามความคืบหน้าของโครงการ (Weekly) 5 |  | 1d | 2025-05-14 | 2025-05-14 |  |  |  | 80d | start no earlier than 2025-05-14 |  |  |  | 0% |
| 23 | 3.6 | ประชุมติดตามความคืบหน้าของโครงการ (Weekly) 6 |  | 1d | 2025-05-21 | 2025-05-21 |  |  |  | 75d | start no earlier than 2025-05-21 |  |  |  | 0% |
| 24 | 3.7 | ประชุมติดตามความคืบหน้าของโครงการ (Weekly) 7 |  | 1d | 2025-05-28 | 2025-05-28 |  |  |  | 70d | start no earlier than 2025-05-28 |  |  |  | 0% |
| 25 | 3.8 | ประชุมติดตามความคืบหน้าของโครงการ (Weekly) 8 |  | 1d | 2025-06-04 | 2025-06-04 |  |  |  | 65d | start no earlier than 2025-06-04 |  |  |  | 0% |
| 26 | 3.9 | ประชุมติดตามความคืบหน้าของโครงการ (Weekly) 9 |  | 1d | 2025-06-11 | 2025-06-11 |  |  |  | 60d | start no earlier than 2025-06-11 |  |  |  | 0% |
| 27 | 3.10 | ประชุมติดตามความคืบหน้าของโครงการ (Weekly) 10 |  | 1d | 2025-06-18 | 2025-06-18 |  |  |  | 55d | start no earlier than 2025-06-18 |  |  |  | 0% |
| 28 | 3.11 | ประชุมติดตามความคืบหน้าของโครงการ (Weekly) 11 |  | 1d | 2025-06-25 | 2025-06-25 |  |  |  | 50d | start no earlier than 2025-06-25 |  |  |  | 0% |
| 29 | 3.12 | ประชุมติดตามความคืบหน้าของโครงการ (Weekly) 12 |  | 1d | 2025-07-02 | 2025-07-02 |  |  |  | 45d | start no earlier than 2025-07-02 |  |  |  | 0% |
| 30 | 3.13 | ประชุมติดตามความคืบหน้าของโครงการ (Weekly) 13 |  | 1d | 2025-07-09 | 2025-07-09 |  |  |  | 40d | start no earlier than 2025-07-09 |  |  |  | 0% |
| 31 | 3.14 | ประชุมติดตามความคืบหน้าของโครงการ (Weekly) 14 |  | 1d | 2025-07-16 | 2025-07-16 |  |  |  | 35d | start no earlier than 2025-07-16 |  |  |  | 0% |
| 32 | 3.15 | ประชุมติดตามความคืบหน้าของโครงการ (Weekly) 15 |  | 1d | 2025-07-23 | 2025-07-23 |  |  |  | 30d | start no earlier than 2025-07-23 |  |  |  | 0% |
| 33 | 3.16 | ประชุมติดตามความคืบหน้าของโครงการ (Weekly) 16 |  | 1d | 2025-07-30 | 2025-07-30 |  |  |  | 25d | start no earlier than 2025-07-30 |  |  |  | 0% |
| 34 | 3.17 | ประชุมติดตามความคืบหน้าของโครงการ (Weekly) 17 |  | 1d | 2025-08-06 | 2025-08-06 |  |  |  | 20d | start no earlier than 2025-08-06 |  |  |  | 0% |
| 35 | 3.18 | ประชุมติดตามความคืบหน้าของโครงการ (Weekly) 18 |  | 1d | 2025-08-13 | 2025-08-13 |  |  |  | 15d | start no earlier than 2025-08-13 |  |  |  | 0% |
| 36 | 3.19 | ประชุมติดตามความคืบหน้าของโครงการ (Weekly) 19 |  | 1d | 2025-08-20 | 2025-08-20 |  |  |  | 10d | start no earlier than 2025-08-20 |  |  |  | 0% |
| 37 | 3.20 | ประชุมติดตามความคืบหน้าของโครงการ (Weekly) 20 |  | 1d | 2025-08-27 | 2025-08-27 |  |  |  | 5d | start no earlier than 2025-08-27 |  |  |  | 0% |

| ID | WBS | Task | Duration | Start | Finish | Predecessors | Complete | Remaining | Total slack | Free slack | Constraint | Resources | Work | Actual work | Percent Plan |
| --- | --- | --- | --- | --- | --- | --- | --- | --- | --- | --- | --- | --- | --- | --- | --- |
| 38 | 4 | **รายงานความคืบหน้าของโครงการใน Tech.PMO (Monthly)** | 91d | 2025-04-25 A | 2025-08-29 |  | 20% | 72.8d | 3d |  |  |  |  |  | 20% |
| 39 | 4.1 | รายงานความคืบหน้าของโครงการใน Tech.PMO (Monthly) 1 | 1d | 2025-04-25 A | 2025-04-25 A |  | 100% |  |  |  | start no earlier than 2025-04-25 |  |  |  | 100% |
| 40 | 4.2 | รายงานความคืบหน้าของโครงการใน Tech.PMO (Monthly) 2 | 1d | 2025-05-30 | 2025-05-30 |  |  |  | 68d |  | start no earlier than 2025-05-30 |  |  |  | 0% |
| 41 | 4.3 | รายงานความคืบหน้าของโครงการใน Tech.PMO (Monthly) 3 | 1d | 2025-06-27 | 2025-06-27 |  |  |  | 48d |  | start no earlier than 2025-06-27 |  |  |  | 0% |
| 42 | 4.4 | รายงานความคืบหน้าของโครงการใน Tech.PMO (Monthly) 4 | 1d | 2025-07-25 | 2025-07-25 |  |  |  | 28d |  | start no earlier than 2025-07-25 |  |  |  | 0% |
| 43 | 4.5 | รายงานความคืบหน้าของโครงการใน Tech.PMO (Monthly) 5 | 1d | 2025-08-29 | 2025-08-29 |  |  |  | 3d |  | start no earlier than 2025-08-29 |  |  |  | 0% |
| 44 | 5 | **Requirement Gathering** | 8d | 2025-05-06 A | 2025-05-15 |  | 88% | 1d | 0d |  |  |  | 264h | 240h | 75% |
| 45 | 5.1 | ศึกษากระบวนการทำงานในปัจจุบัน (As Is) | 2d | 2025-05-06 A | 2025-05-07 A | 16FS+1d | 100% |  |  |  |  | Aunchala; Sutripat | 32h | 32h | 100% |
| 46 | 5.2 | ศึกษาปัญหาของการทำงานในปัจจุบัน | 2d | 2025-05-06 A | 2025-05-07 A | 45SS | 100% |  |  |  |  | Aunchala; Sutripat | 32h | 32h | 100% |
| 47 | 5.3 | จัดประชุมสัมภาษณ์ตัวแทนผู้ปฏิบัติงานเพื่อค้นหาความต้องการ (Interview Key Users) | 2d | 2025-05-06 A | 2025-05-07 A | 45SS | 100% |  |  |  |  | Aunchala; Chakhrit; Sutripat; Tanchanok; Pornpun | 80h | 80h | 100% |
| 48 | 5.4 | สรุปจัดทำรายละเอียดความต้องการ (Develop Requirement Specification) | 1d | 2025-05-08 A | 2025-05-08 A | 47 | 100% |  |  |  |  | Aunchala; Sutripat | 16h | 16h | 100% |
| 49 | 5.5 | ประชุมกับ User เพื่อสรุปยืนยัน Requirement | 1d | 2025-05-09 A | 2025-05-09 A | 48 | 100% |  |  |  |  | Aunchala; Chakhrit; Sutripat; Tanchanok; Pornpun | 40h | 40h | 100% |
| 50 | 5.6 | แก้ไขเอกสาร Requirement Specification #ครั้งที่ 1 | 1d | 2025-05-13 A | 2025-05-13 A | 49FS+1d | 100% |  |  |  |  | Aunchala; Sutripat | 16h | 16h | 100% |
| 51 | 5.7 | อนุมัติและยืนยัน Requirement Specification (Milestone #3) | 1d | 2025-05-14 A | 2025-05-14 A | 50 | 100% |  |  |  |  | Aunchala | 8h | 8h | 0% |
| 52 | 5.8 | กำหนดระยะเวลาการเก็บรักษาข้อมูล (Data Retention) | 1d | 2025-05-14 A | 2025-05-14 | 51SS | 50% | 0.5d | 0d |  |  | Aunchala; Chakhrit; Sutripat; Tanchanok | 32h | 16h | 0% |
| 53 | 5.9 | อนุมัติและยืนยัน Data Retention Sign-Off Form (Milestone #4) | 1d | 2025-05-15 | 2025-05-15 | 52 |  |  | 0d |  |  | Aunchala | 8h |  | 0% |
| 54 | 6 | **Design** | 17d | 2025-05-16 | 2025-06-09 |  |  |  | 1d |  |  |  | 672h |  | 0% |
| 55 | 6.1 | ออกแบบสถาปัตยกรรมระบบ (Solution Architecture) | 4d | 2025-05-16 | 2025-05-21 | 53 |  |  | 68d | 0d |  | Sutripat | 32h |  | 0% |
| 56 | 6.2 | ออกแบบ Data Flow ของระบบงาน | 3d | 2025-05-22 | 2025-05-26 | 55 |  |  | 72d |  |  | Sutripat | 24h |  | 0% |
| 57 | 6.3 | ออกแบบโครงสร้างฐานข้อมูล (DB Structure and Schema) | 7d | 2025-05-22 | 2025-05-30 | 55 |  |  | 68d |  |  | Sutripat | 56h |  | 0% |
| 58 | 6.4 | Business process management and Business process risk management training for User | 2d | 2025-05-19 | 2025-05-20 | 53FS+1d |  |  | 0d |  |  | Aunchala; Tanchanok; Krittalak | 48h |  | 0% |
| 59 | 6.5 | จัดทำเอกสาร Business process risk management | 13d | 2025-05-21 | 2025-06-06 | 58 |  |  | 0d |  |  | Tanchanok; Aunchala | 208h |  | 0% |
| 60 | 6.6 | ส่งมอบเอกสาร Business process risk management และเอกสารที่เกี่ยวข้อง (Milestone #5) | 1d | 2025-06-09 | 2025-06-09 | 59 |  |  | 0d |  |  | Aunchala | 8h |  | 0% |
| 61 | 6.7 | **กลุ่มงาน IT** | 1d | 2025-05-28 | 2025-05-28 |  |  |  | 36d |  |  |  | 16h |  | 0% |
| 62 | 6.7.1 | ออกแบบแบบฟอร์มการประเมินคุณภาพการส่งมอบสินค้า/บริการ (For IT User) | 1d | 2025-05-28 | 2025-05-28 | 53FS+8d |  |  | 36d | 0d |  | Aunchala; Tanchanok | 16h |  | 0% |

| ID | WBS | Task | Duration | Start | Finish | Predecessors | Total slack | Free slack | Resources | Work | Percent Plan |
| --- | --- | --- | --- | --- | --- | --- | --- | --- | --- | --- | --- |
| 63 | 6.8 | **กลุ่มงาน WASTE** | 1d | 2025-05-28 | 2025-05-28 |  | 70d |  |  | 16h | 0% |
| 64 | 6.8.1 | ออกแบบแบบฟอร์มการประเมินคุณภาพการส่งมอบสินค้า/บริการ WASTE | 1d | 2025-05-28 | 2025-05-28 | 62SS | 70d |  | Aunchala; Tanchanok | 16h | 0% |
| 65 | 6.9 | **กลุ่มงาน Logistic** | 1d | 2025-05-28 | 2025-05-28 |  | 70d |  |  | 16h | 0% |
| 66 | 6.9.1 | ออกแบบแบบฟอร์มการประเมินคุณภาพการส่งมอบสินค้า/บริการ Vendor-N (G.Logistics) | 1d | 2025-05-28 | 2025-05-28 | 62SS | 70d |  | Aunchala; Tanchanok | 16h | 0% |
| 67 | 6.10 | **กลุ่มงาน Manufacturing** | 1d | 2025-05-28 | 2025-05-28 |  | 70d |  |  | 16h | 0% |
| 68 | 6.10.1 | ออกแบบแบบฟอร์มการประเมินคุณภาพการส่งมอบสินค้า/บริการ Manufacturing_N | 1d | 2025-05-28 | 2025-05-28 | 62SS | 70d |  | Aunchala; Tanchanok | 16h | 0% |
| 69 | 6.11 | **กลุ่มงาน Commercial** | 1d | 2025-05-28 | 2025-05-28 |  | 70d |  |  | 16h | 0% |
| 70 | 6.11.1 | ออกแบบแบบฟอร์มการประเมินคุณภาพการส่งมอบสินค้า/บริการ Commercial | 1d | 2025-05-28 | 2025-05-28 | 62SS | 70d |  | Aunchala; Tanchanok | 16h | 0% |
| 71 | 6.12 | **กลุ่มงาน Outsource** | 1d | 2025-05-28 | 2025-05-28 |  | 36d |  |  | 16h | 0% |
| 72 | 6.12.1 | ออกแบบแบบฟอร์มการประเมินคุณภาพการส่งมอบสินค้า/บริการ (Outsource) | 1d | 2025-05-28 | 2025-05-28 | 62SS | 36d | 0d | Aunchala; Tanchanok | 16h | 0% |
| 73 | 6.13 | **กลุ่มงาน Raw material** | 1d | 2025-05-29 | 2025-05-29 |  | 36d |  |  | 16h | 0% |
| 74 | 6.13.1 | ออกแบบแบบฟอร์มการประเมินคุณภาพการส่งมอบสินค้า/บริการ (RAW MATERIAL) | 1d | 2025-05-29 | 2025-05-29 | 72 | 36d | 0d | Aunchala; Tanchanok | 16h | 0% |
| 75 | 6.14 | **กลุ่มงาน Packaging** | 1d | 2025-05-29 | 2025-05-29 |  | 36d |  |  | 16h | 0% |
| 76 | 6.14.1 | ออกแบบแบบฟอร์มการประเมินคุณภาพการส่งมอบสินค้า/บริการ (PKG) | 1d | 2025-05-29 | 2025-05-29 | 74SS | 36d | 0d | Aunchala; Tanchanok | 16h | 0% |
| 77 | 6.15 | **กลุ่มงาน Agile** | 1d | 2025-05-30 | 2025-05-30 |  | 36d |  |  | 16h | 0% |
| 78 | 6.15.1 | ออกแบบแบบฟอร์มการประเมินคุณภาพการส่งมอบสินค้า/บริการ (AGILE) | 1d | 2025-05-30 | 2025-05-30 | 76 | 36d | 0d | Aunchala; Tanchanok | 16h | 0% |
| 79 | 6.16 | **กลุ่มงาน Property** | 1d | 2025-05-30 | 2025-05-30 |  | 68d |  |  | 16h | 0% |
| 80 | 6.16.1 | ออกแบบแบบฟอร์มการประเมินคุณภาพการส่งมอบสินค้า/บริการ (PROPERTY) | 1d | 2025-05-30 | 2025-05-30 | 78SS | 68d |  | Aunchala; Tanchanok | 16h | 0% |
| 81 | 6.17 | **กลุ่มงาน Energy and Chemical** | 1d | 2025-05-30 | 2025-05-30 |  | 36d |  |  | 16h | 0% |
| 82 | 6.17.1 | ออกแบบแบบฟอร์มการประเมินคุณภาพการส่งมอบสินค้า/บริการ (ENERGY_CHEMICAL) | 1d | 2025-05-30 | 2025-05-30 | 78SS | 36d | 0d | Aunchala; Tanchanok | 16h | 0% |
| 83 | 6.18 | จัดทำรายละเอียดการออกแบบระบบ (Design Specification) | 3d | 2025-06-02 | 2025-06-04 | 82 | 36d | 0d | Aunchala; Sutripat | 48h | 0% |
| 84 | 6.19 | ประชุมกับ Key User เพื่อสรุปยืนยัน Design Specification | 1d | 2025-06-05 | 2025-06-05 | 83 | 36d | 0d | Aunchala; Chakhrit; Sutripat; Tanchanok | 32h | 0% |
| 85 | 6.20 | Key User ตรวจสอบยืนยัน Design Specification | 1d | 2025-06-06 | 2025-06-06 | 84 | 36d | 0d | Aunchala; Chakhrit; Sutripat; Tanchanok | 32h | 0% |
| 86 | 6.21 | อนุมัติและยืนยัน Design Specification (Milestone #6) | 1d | 2025-06-09 | 2025-06-09 | 85 | 36d | 0d | Aunchala | 8h | 0% |

| ID | WBS | Task | Duration | Start | Finish | Predecessors | Total slack | Free slack | Resources | Work | Percent Plan |
| --- | --- | --- | --- | --- | --- | --- | --- | --- | --- | --- | --- |
| 87 | 7 | **Implementation & UT** | 32d | 2025-06-04 | 2025-07-17 |  | 0d |  |  | 2504h | 0% |
| 88 | 7.1 | **พัฒนาแบบประเมินบน Microsoft Form** | 2d | 2025-06-10 | 2025-06-11 |  | 36d |  |  | 528h | 0% |
| 89 | 7.1.1 | **กลุ่มงาน IT** | 1d | 2025-06-10 | 2025-06-10 |  | 36d |  |  | 48h | 0% |
| 90 | 7.1.1.1 | พัฒนาแบบฟอร์มการประเมินคุณภาพการส่งมอบสินค้า/บริการ (For IT User) | 1d | 2025-06-10 | 2025-06-10 | 86 | 36d | 0d | Aunchala; Tanchanok | 16h | 0% |
| 91 | 7.1.1.2 | ทดสอบแบบฟอร์มการประเมินคุณภาพการส่งมอบสินค้า/บริการ (For IT User) | 1d | 2025-06-10 | 2025-06-10 | 90SS | 60d | 0d | Aunchala; Tanchanok; Chakhrit; Sutripat | 32h | 0% |
| 92 | 7.1.2 | **กลุ่มงาน WASTE** | 1d | 2025-06-10 | 2025-06-10 |  | 61d |  |  | 48h | 0% |
| 93 | 7.1.2.1 | พัฒนาแบบฟอร์มการประเมินคุณภาพการส่งมอบสินค้า/บริการ WASTE | 1d | 2025-06-10 | 2025-06-10 | 90SS | 61d |  | Aunchala; Tanchanok | 16h | 0% |
| 94 | 7.1.2.2 | ทดสอบแบบฟอร์มการประเมินคุณภาพการส่งมอบสินค้า/บริการ (For IT User) | 1d | 2025-06-10 | 2025-06-10 | 90SS | 61d |  | Aunchala; Sutripat; Tanchanok; Chakhrit | 32h | 0% |
| 95 | 7.1.3 | **กลุ่มงาน Logistic** | 1d | 2025-06-10 | 2025-06-10 |  | 61d |  |  | 48h | 0% |
| 96 | 7.1.3.1 | พัฒนาแบบฟอร์มการประเมินคุณภาพการส่งมอบสินค้า/บริการ Vendor-N (G.Logistics) | 1d | 2025-06-10 | 2025-06-10 | 90SS | 61d |  | Aunchala; Tanchanok | 16h | 0% |
| 97 | 7.1.3.2 | ทดสอบแบบฟอร์มการประเมินคุณภาพการส่งมอบสินค้า/บริการ Vendor-N (G.Logistics) | 1d | 2025-06-10 | 2025-06-10 | 90SS | 61d |  | Aunchala; Tanchanok; Chakhrit; Sutripat | 32h | 0% |
| 98 | 7.1.4 | **กลุ่มงาน Manufacturing** | 1d | 2025-06-10 | 2025-06-10 |  | 61d |  |  | 48h | 0% |
| 99 | 7.1.4.1 | พัฒนาแบบฟอร์มการประเมินคุณภาพการส่งมอบสินค้า/บริการ Manufacturing_N | 1d | 2025-06-10 | 2025-06-10 | 90SS | 61d |  | Aunchala; Tanchanok | 16h | 0% |
| 100 | 7.1.4.2 | ทดสอบแบบฟอร์มการประเมินคุณภาพการส่งมอบสินค้า/บริการ Manufacturing_N | 1d | 2025-06-10 | 2025-06-10 | 90SS | 61d |  | Aunchala; Tanchanok; Chakhrit; Sutripat | 32h | 0% |
| 101 | 7.1.5 | **กลุ่มงาน Commercial** | 1d | 2025-06-10 | 2025-06-10 |  | 61d |  |  | 48h | 0% |
| 102 | 7.1.5.1 | พัฒนาแบบฟอร์มการประเมินคุณภาพการส่งมอบสินค้า/บริการ Commercial | 1d | 2025-06-10 | 2025-06-10 | 90SS | 61d |  | Aunchala; Tanchanok | 16h | 0% |
| 103 | 7.1.5.2 | ทดสอบแบบฟอร์มการประเมินคุณภาพการส่งมอบสินค้า/บริการ Commercial | 1d | 2025-06-10 | 2025-06-10 | 90SS | 61d |  | Aunchala; Tanchanok; Chakhrit; Sutripat | 32h | 0% |
| 104 | 7.1.6 | **กลุ่มงาน Outsource** | 1d | 2025-06-10 | 2025-06-10 |  | 36d |  |  | 48h | 0% |
| 105 | 7.1.6.1 | พัฒนาแบบฟอร์มการประเมินคุณภาพการส่งมอบสินค้า/บริการ (Outsource) | 1d | 2025-06-10 | 2025-06-10 | 90SS | 61d |  | Aunchala; Tanchanok | 16h | 0% |
| 106 | 7.1.6.2 | ทดสอบแบบฟอร์มการประเมินคุณภาพการส่งมอบสินค้า/บริการ (Outsource) | 1d | 2025-06-10 | 2025-06-10 | 90SS | 36d | 0d | Aunchala; Tanchanok; Chakhrit; Sutripat | 32h | 0% |
| 107 | 7.1.7 | **กลุ่มงาน Raw material** | 1d | 2025-06-11 | 2025-06-11 |  | 36d |  |  | 48h | 0% |
| 108 | 7.1.7.1 | พัฒนาแบบฟอร์มการประเมินคุณภาพการส่งมอบสินค้า/บริการ RAW MATERIAL | 1d | 2025-06-11 | 2025-06-11 | 106 | 36d | 0d | Aunchala; Tanchanok | 16h | 0% |
| 109 | 7.1.7.2 | ทดสอบแบบฟอร์มการประเมินคุณภาพการส่งมอบสินค้า/บริการ RAW MATERIAL | 1d | 2025-06-11 | 2025-06-11 | 108SS | 36d | 0d | Aunchala; Tanchanok; Chakhrit; Sutripat | 32h | 0% |
| 110 | 7.1.8 | **กลุ่มงาน Packaging** | 1d | 2025-06-11 | 2025-06-11 |  | 60d |  |  | 48h | 0% |
| 111 | 7.1.8.1 | พัฒนาแบบฟอร์มการประเมินคุณภาพการส่งมอบสินค้า/บริการ PKG | 1d | 2025-06-11 | 2025-06-11 | 108SS | 60d |  | Aunchala; Tanchanok | 16h | 0% |
| 112 | 7.1.8.2 | ทดสอบแบบฟอร์มการประเมินคุณภาพการส่งมอบสินค้า/บริการ PKG | 1d | 2025-06-11 | 2025-06-11 | 108SS | 60d |  | Aunchala; Tanchanok; Chakhrit; Sutripat | 32h | 0% |

| ID | WBS | Task | Duration | Start | Finish | Predecessors | Total slack | Free slack | Resources | Work | Percent Plan |
| --- | --- | --- | --- | --- | --- | --- | --- | --- | --- | --- | --- |
| 113 | 7.1.9 | **กลุ่มงาน Agile** | 1d | 2025-06-11 | 2025-06-11 |  | 60d |  |  | 48h | 0% |
| 114 | 7.1.9.1 | พัฒนาแบบฟอร์มการประเมินคุณภาพการส่งมอบสินค้า/บริการ AGILE | 1d | 2025-06-11 | 2025-06-11 | 108SS | 60d |  | Aunchala; Tanchanok | 16h | 0% |
| 115 | 7.1.9.2 | ทดสอบแบบฟอร์มการประเมินคุณภาพการส่งมอบสินค้า/บริการ AGILE | 1d | 2025-06-11 | 2025-06-11 | 108SS | 60d |  | Aunchala; Tanchanok; Chakhrit; Sutripat | 32h | 0% |
| 116 | 7.1.10 | **กลุ่มงาน Property** | 1d | 2025-06-11 | 2025-06-11 |  | 60d |  |  | 48h | 0% |
| 117 | 7.1.10.1 | พัฒนาแบบฟอร์มการประเมินคุณภาพการส่งมอบสินค้า/บริการ PROPERTY | 1d | 2025-06-11 | 2025-06-11 | 108SS | 60d |  | Aunchala; Tanchanok | 16h | 0% |
| 118 | 7.1.10.2 | ทดสอบแบบฟอร์มการประเมินคุณภาพการส่งมอบสินค้า/บริการ PROPERTY | 1d | 2025-06-11 | 2025-06-11 | 108SS | 60d |  | Aunchala; Tanchanok; Chakhrit; Sutripat | 32h | 0% |
| 119 | 7.1.11 | **กลุ่มงาน Energy and Chemical** | 1d | 2025-06-11 | 2025-06-11 |  | 60d |  |  | 48h | 0% |
| 120 | 7.1.11.1 | พัฒนาแบบฟอร์มการประเมินคุณภาพการส่งมอบสินค้า/บริการ ENERGY_CHEMICAL | 1d | 2025-06-11 | 2025-06-11 | 108SS | 60d |  | Aunchala; Tanchanok | 16h | 0% |
| 121 | 7.1.11.2 | ทดสอบแบบฟอร์มการประเมินคุณภาพการส่งมอบสินค้า/บริการ ENERGY_CHEMICAL | 1d | 2025-06-11 | 2025-06-11 | 108SS | 60d |  | Aunchala; Tanchanok; Chakhrit; Sutripat | 32h | 0% |
| 122 | 7.2 | **พัฒนาแบบประเมินของกลุ่มงาน IT** | 1d | 2025-06-11 | 2025-06-11 |  | 60d |  |  | 80h | 0% |
| 123 | 7.2.1 | พัฒนา Flow แบบประเมินคุณภาพการส่งมอบสินค้า/บริการ (For IT User) บน Power Automate | 1d | 2025-06-11 | 2025-06-11 | 91 | 60d | 0d | Chakhrit | 8h | 0% |
| 124 | 7.2.2 | ทดสอบการเชื่อมต่อระหว่าง Microsoft Form และ Power Automate | 1d | 2025-06-11 | 2025-06-11 | 123SS | 60d |  | Aunchala; Tanchanok; Chakhrit; Sutripat | 32h | 0% |
| 125 | 7.2.3 | พัฒนา List สำหรับจัดเก็บข้อมูลแบบประเมินคุณภาพการส่งมอบสินค้า/บริการ (For IT User) บน Sharepoint | 1d | 2025-06-11 | 2025-06-11 | 123SS | 60d |  | Chakhrit | 8h | 0% |
| 126 | 7.2.4 | ทดสอบการเชื่อมต่อระหว่าง Microsoft Form ,Power Automate และ Sharepoint List | 1d | 2025-06-11 | 2025-06-11 | 123SS | 60d |  | Aunchala; Tanchanok; Chakhrit; Sutripat | 32h | 0% |
| 127 | 7.3 | **พัฒนาแบบประเมินของกลุ่มงาน WASTE** | 1d | 2025-06-11 | 2025-06-11 |  | 60d |  |  | 80h | 0% |
| 128 | 7.3.1 | พัฒนา Flow แบบประเมินคุณภาพการส่งมอบสินค้า/บริการ WASTE บน Power Automate | 1d | 2025-06-11 | 2025-06-11 | 123SS | 60d |  | Chakhrit | 8h | 0% |
| 129 | 7.3.2 | ทดสอบการเชื่อมต่อระหว่าง Microsoft Form และ Power Automate | 1d | 2025-06-11 | 2025-06-11 | 123SS | 60d |  | Aunchala; Tanchanok; Chakhrit; Sutripat | 32h | 0% |
| 130 | 7.3.3 | พัฒนา List สำหรับจัดเก็บข้อมูลแบบประเมินคุณภาพการส่งมอบสินค้า/บริการ WASTE บน Sharepoint | 1d | 2025-06-11 | 2025-06-11 | 123SS | 60d |  | Chakhrit | 8h | 0% |
| 131 | 7.3.4 | ทดสอบการเชื่อมต่อระหว่าง Microsoft Form ,Power Automate และ Sharepoint List | 1d | 2025-06-11 | 2025-06-11 | 123SS | 60d |  | Aunchala; Tanchanok; Chakhrit; Sutripat | 32h | 0% |
| 132 | 7.4 | **พัฒนาแบบประเมินของกลุ่มงาน Logistic** | 1d | 2025-06-11 | 2025-06-11 |  | 60d |  |  | 80h | 0% |
| 133 | 7.4.1 | พัฒนา Flow แบบประเมินคุณภาพการส่งมอบสินค้า/บริการ Vendor-N (G.Logistics) บน Power Automate | 1d | 2025-06-11 | 2025-06-11 | 123SS | 60d |  | Chakhrit | 8h | 0% |
| 134 | 7.4.2 | ทดสอบการเชื่อมต่อระหว่าง Microsoft Form และ Power Automate | 1d | 2025-06-11 | 2025-06-11 | 123SS | 60d |  | Aunchala; Tanchanok; Chakhrit; Sutripat | 32h | 0% |
| 135 | 7.4.3 | พัฒนา List สำหรับจัดเก็บข้อมูลแบบประเมินคุณภาพการส่งมอบสินค้า/บริการ Vendor-N (G.Logistics) บน Sharepoint | 1d | 2025-06-11 | 2025-06-11 | 123SS | 60d |  | Chakhrit | 8h | 0% |
| 136 | 7.4.4 | ทดสอบการเชื่อมต่อระหว่าง Microsoft Form ,Power Automate และ Sharepoint List | 1d | 2025-06-11 | 2025-06-11 | 123SS | 60d |  | Aunchala; Tanchanok; Chakhrit; Sutripat | 32h | 0% |

| ID | WBS | Task | Duration | Start | Finish | Predecessors | Total slack | Free slack | Resources | Work | Percent Plan |
| --- | --- | --- | --- | --- | --- | --- | --- | --- | --- | --- | --- |
| 137 | 7.5 | **พัฒนาแบบประเมินของกลุ่มงาน Manufaturing** | 1d | 2025-06-11 | 2025-06-11 |  | 60d |  |  | 80h | 0% |
| 138 | 7.5.1 | พัฒนา Flow แบบประเมินคุณภาพการส่งมอบสินค้า/บริการ Manufacturing_N บน Power Automate | 1d | 2025-06-11 | 2025-06-11 | 123SS | 60d |  | Chakhrit | 8h | 0% |
| 139 | 7.5.2 | ทดสอบการเชื่อมต่อระหว่าง Microsoft Form และ Power Automate | 1d | 2025-06-11 | 2025-06-11 | 123SS | 60d |  | Aunchala; Tanchanok; Chakhrit; Sutripat | 32h | 0% |
| 140 | 7.5.3 | พัฒนา List สำหรับจัดเก็บข้อมูลแบบประเมินคุณภาพการส่งมอบสินค้า/บริการ Manufacturing_N บน Sharepoint | 1d | 2025-06-11 | 2025-06-11 | 123SS | 60d |  | Chakhrit | 8h | 0% |
| 141 | 7.5.4 | ทดสอบการเชื่อมต่อระหว่าง Microsoft Form ,Power Automate และ Sharepoint List | 1d | 2025-06-11 | 2025-06-11 | 123SS | 60d |  | Aunchala; Tanchanok; Chakhrit; Sutripat | 32h | 0% |
| 142 | 7.6 | **พัฒนาแบบประเมินของกลุ่มงาน Commercial** | 1d | 2025-06-11 | 2025-06-11 |  | 60d |  |  | 80h | 0% |
| 143 | 7.6.1 | พัฒนา Flow แบบประเมินคุณภาพการส่งมอบสินค้า/บริการ Commercial บน Power Automate | 1d | 2025-06-11 | 2025-06-11 | 123SS | 60d |  | Chakhrit | 8h | 0% |
| 144 | 7.6.2 | ทดสอบการเชื่อมต่อระหว่าง Microsoft Form และ Power Automate | 1d | 2025-06-11 | 2025-06-11 | 123SS | 60d |  | Aunchala; Tanchanok; Chakhrit; Sutripat | 32h | 0% |
| 145 | 7.6.3 | พัฒนา List สำหรับจัดเก็บข้อมูลแบบประเมินคุณภาพการส่งมอบสินค้า/บริการ Commercial บน Sharepoint | 1d | 2025-06-11 | 2025-06-11 | 123SS | 60d |  | Chakhrit | 8h | 0% |
| 146 | 7.6.4 | ทดสอบการเชื่อมต่อระหว่าง Microsoft Form ,Power Automate และ Sharepoint List | 1d | 2025-06-11 | 2025-06-11 | 123SS | 60d |  | Aunchala; Tanchanok; Chakhrit; Sutripat | 32h | 0% |
| 147 | 7.7 | **พัฒนาแบบประเมินของกลุ่มงาน Outsource** | 1d | 2025-06-11 | 2025-06-11 |  | 60d |  |  | 80h | 0% |
| 148 | 7.7.1 | พัฒนา Flow แบบประเมินคุณภาพการส่งมอบสินค้า/บริการ (Outsource) บน Power Automate | 1d | 2025-06-11 | 2025-06-11 | 123SS | 60d |  | Chakhrit | 8h | 0% |
| 149 | 7.7.2 | ทดสอบการเชื่อมต่อระหว่าง Microsoft Form และ Power Automate | 1d | 2025-06-11 | 2025-06-11 | 123SS | 60d |  | Aunchala; Tanchanok; Chakhrit; Sutripat | 32h | 0% |
| 150 | 7.7.3 | พัฒนา List สำหรับจัดเก็บข้อมูลแบบประเมินคุณภาพการส่งมอบสินค้า/บริการ (Outsource) บน Sharepoint | 1d | 2025-06-11 | 2025-06-11 | 123SS | 60d |  | Chakhrit | 8h | 0% |
| 151 | 7.7.4 | ทดสอบการเชื่อมต่อระหว่าง Microsoft Form ,Power Automate และ Sharepoint List | 1d | 2025-06-11 | 2025-06-11 | 123SS | 60d |  | Aunchala; Tanchanok; Chakhrit; Sutripat | 32h | 0% |
| 152 | 7.8 | **พัฒนาแบบประเมินของกลุ่มงาน Raw material** | 1d | 2025-06-12 | 2025-06-12 |  | 36d |  |  | 80h | 0% |
| 153 | 7.8.1 | พัฒนา Flow แบบประเมินคุณภาพการส่งมอบสินค้า/บริการ RAW MATERIAL บน Power Automate | 1d | 2025-06-12 | 2025-06-12 | 109 | 36d | 0d | Chakhrit | 8h | 0% |
| 154 | 7.8.2 | ทดสอบการเชื่อมต่อระหว่าง Microsoft Form และ Power Automate | 1d | 2025-06-12 | 2025-06-12 | 153SS | 59d |  | Aunchala; Tanchanok; Chakhrit; Sutripat | 32h | 0% |
| 155 | 7.8.3 | พัฒนา List สำหรับจัดเก็บข้อมูลแบบประเมินคุณภาพการส่งมอบสินค้า/บริการ RAW MATERIAL บน Sharepoint | 1d | 2025-06-12 | 2025-06-12 | 153SS | 59d |  | Chakhrit | 8h | 0% |
| 156 | 7.8.4 | ทดสอบการเชื่อมต่อระหว่าง Microsoft Form ,Power Automate และ Sharepoint List | 1d | 2025-06-12 | 2025-06-12 | 153SS | 59d |  | Aunchala; Tanchanok; Chakhrit; Sutripat | 32h | 0% |
| 157 | 7.9 | **พัฒนาแบบประเมินของกลุ่มงาน Packaging** | 1d | 2025-06-12 | 2025-06-12 |  | 59d |  |  | 80h | 0% |
| 158 | 7.9.1 | พัฒนา Flow แบบประเมินคุณภาพการส่งมอบสินค้า/บริการ PKG บน Power Automate | 1d | 2025-06-12 | 2025-06-12 | 153SS | 59d |  | Chakhrit | 8h | 0% |
| 159 | 7.9.2 | ทดสอบการเชื่อมต่อระหว่าง Microsoft Form และ Power Automate | 1d | 2025-06-12 | 2025-06-12 | 153SS | 59d |  | Aunchala; Tanchanok; Chakhrit; Sutripat | 32h | 0% |
| 160 | 7.9.3 | พัฒนา List สำหรับจัดเก็บข้อมูลแบบประเมินคุณภาพการส่งมอบสินค้า/บริการ PKG บน Sharepoint | 1d | 2025-06-12 | 2025-06-12 | 153SS | 59d |  | Chakhrit | 8h | 0% |
| 161 | 7.9.4 | ทดสอบการเชื่อมต่อระหว่าง Microsoft Form ,Power Automate และ Sharepoint List | 1d | 2025-06-12 | 2025-06-12 | 153SS | 59d |  | Aunchala; Tanchanok; Chakhrit; Sutripat | 32h | 0% |

| ID | WBS | Task | Duration | Start | Finish | Predecessors | Total slack | Free slack | Resources | Work | Percent Plan |
| --- | --- | --- | --- | --- | --- | --- | --- | --- | --- | --- | --- |
| 162 | 7.10 | **พัฒนาแบบประเมินของกลุ่มงาน Agile** | 1d | 2025-06-12 | 2025-06-12 |  | 59d |  |  | 80h | 0% |
| 163 | 7.10.1 | พัฒนา Flow แบบประเมินคุณภาพการส่งมอบสินค้า/บริการ AGILE บน Power Automate | 1d | 2025-06-12 | 2025-06-12 | 153SS | 59d |  | Chakhrit | 8h | 0% |
| 164 | 7.10.2 | ทดสอบการเชื่อมต่อระหว่าง Microsoft Form และ Power Automate | 1d | 2025-06-12 | 2025-06-12 | 153SS | 59d |  | Aunchala; Tanchanok; Chakhrit; Sutripat | 32h | 0% |
| 165 | 7.10.3 | พัฒนา List สำหรับจัดเก็บข้อมูลแบบประเมินคุณภาพการส่งมอบสินค้า/บริการ AGILE บน Sharepoint | 1d | 2025-06-12 | 2025-06-12 | 153SS | 59d |  | Chakhrit | 8h | 0% |
| 166 | 7.10.4 | ทดสอบการเชื่อมต่อระหว่าง Microsoft Form ,Power Automate และ Sharepoint List | 1d | 2025-06-12 | 2025-06-12 | 153SS | 59d |  | Aunchala; Tanchanok; Chakhrit; Sutripat | 32h | 0% |
| 167 | 7.11 | **พัฒนาแบบประเมินของกลุ่มงาน Property** | 1d | 2025-06-12 | 2025-06-12 |  | 59d |  |  | 80h | 0% |
| 168 | 7.11.1 | พัฒนา Flow แบบประเมินคุณภาพการส่งมอบสินค้า/บริการ PROPERTY บน Power Automate | 1d | 2025-06-12 | 2025-06-12 | 153SS | 59d |  | Chakhrit | 8h | 0% |
| 169 | 7.11.2 | ทดสอบการเชื่อมต่อระหว่าง Microsoft Form และ Power Automate | 1d | 2025-06-12 | 2025-06-12 | 153SS | 59d |  | Aunchala; Tanchanok; Chakhrit; Sutripat | 32h | 0% |
| 170 | 7.11.3 | พัฒนา List สำหรับจัดเก็บข้อมูลแบบประเมินคุณภาพการส่งมอบสินค้า/บริการ PROPERTY บน Sharepoint | 1d | 2025-06-12 | 2025-06-12 | 153SS | 59d |  | Chakhrit | 8h | 0% |
| 171 | 7.11.4 | ทดสอบการเชื่อมต่อระหว่าง Microsoft Form ,Power Automate และ Sharepoint List | 1d | 2025-06-12 | 2025-06-12 | 153SS | 59d |  | Aunchala; Tanchanok; Chakhrit; Sutripat | 32h | 0% |
| 172 | 7.12 | **พัฒนาแบบประเมินของกลุ่มงาน Energy and Chemical** | 1d | 2025-06-12 | 2025-06-12 |  | 36d |  |  | 80h | 0% |
| 173 | 7.12.1 | พัฒนา Flow แบบประเมินคุณภาพการส่งมอบสินค้า/บริการ ENERGY_CHEMICAL บน Power Automate | 1d | 2025-06-12 | 2025-06-12 | 153SS | 59d |  | Chakhrit | 8h | 0% |
| 174 | 7.12.2 | ทดสอบการเชื่อมต่อระหว่าง Microsoft Form และ Power Automate | 1d | 2025-06-12 | 2025-06-12 | 153SS | 59d |  | Aunchala; Tanchanok; Chakhrit; Sutripat | 32h | 0% |
| 175 | 7.12.3 | พัฒนา List สำหรับจัดเก็บข้อมูลแบบประเมินคุณภาพการส่งมอบสินค้า/บริการ ENERGY_CHEMICAL บน Sharepoint | 1d | 2025-06-12 | 2025-06-12 | 153SS | 59d |  | Chakhrit | 8h | 0% |
| 176 | 7.12.4 | ทดสอบการเชื่อมต่อระหว่าง Microsoft Form ,Power Automate และ Sharepoint List | 1d | 2025-06-12 | 2025-06-12 | 153SS | 36d | 0d | Aunchala; Tanchanok; Chakhrit; Sutripat | 32h | 0% |
| 177 | 7.13 | พัฒนาโปรแกรมสำหรับดึงข้อมูลจาก Sharepoint List เก็บลง Database | 2d | 2025-06-13 | 2025-06-16 | 176 | 36d | 0d | Sutripat | 16h | 0% |
| 178 | 7.14 | ทดสอบการเชื่อมต่อโปรแกรมระหว่าง Sharepoint List และ Database | 2d | 2025-06-17 | 2025-06-18 | 177 | 36d | 0d | Sutripat | 16h | 0% |
| 179 | 7.15 | พัฒนา Model ใช้สำหรับนำไปแสดงผลรายงาน | 14d | 2025-06-19 | 2025-07-08 | 178 | 36d | 0d | Sutripat | 112h | 0% |
| 180 | 7.16 | พัฒนา Dashboard | 5d | 2025-07-09 | 2025-07-15 | 179 | 36d |  | Sutripat | 40h | 0% |
| 181 | 7.17 | **จัดทำ Draft Process flow และเอกสารที่เกี่ยวข้อง รองรับกระบวนการใหม่** | 31d | 2025-06-04 | 2025-07-16 |  | 0d |  |  | 904h | 0% |
| 182 | 7.17.1 | จัดทำเอกสาร Business Process Flow | 25d | 2025-06-04 | 2025-07-08 | 60FS-4d | 0d |  | Aunchala; Taravit; Junjeera; Tanchanok | 800h | 0% |
| 183 | 7.17.2 | ส่งมอบ UPM Sign-off และ Draf of ARIS Flow ให้กับหน่วยงาน BPM | 3d | 2025-07-09 | 2025-07-11 | 182 | 0d |  | Aunchala; Tanchanok | 48h | 0% |
| 184 | 7.17.3 | จัดเก็บเอกสารเข้าระบบ ISO และส่งมอบเอกสารให้หน่วยงาน BPM | 2d | 2025-07-14 | 2025-07-15 | 183 | 0d |  | Aunchala; Taravit; Junjeera | 48h | 0% |
| 185 | 7.17.4 | ส่งมอบBPM Sign-off Draft Process Flow และเอกสารที่เกี่ยวข้อง (Milestone #7) | 1d | 2025-07-16 | 2025-07-16 | 184 | 0d |  | Aunchala | 8h | 0% |
| 186 | 7.18 | ส่งมอบระบบงานที่พัฒนาเรียบร้อยแล้ว (Milestone #8) | 1d | 2025-07-17 | 2025-07-17 | 185 | 0d |  | Aunchala | 8h | 0% |

| ID | WBS | Task | Duration | Start | Finish | Predecessors | Total slack | Resources | Work | Percent Plan |
| --- | --- | --- | --- | --- | --- | --- | --- | --- | --- | --- |
| 187 | 8 | **Test And Trainning Key User** | 11d | 2025-07-18 | 2025-08-01 |  | 0d |  | 168h | 0% |
| 188 | 8.1 | จัดเตรียม Environment Test | 1d | 2025-07-18 | 2025-07-18 | 186 | 0d | Aunchala; Sutripat | 16h | 0% |
| 189 | 8.2 | จัดทำเอกสารการฝึกอบรมสำหรับ Key User (Trainng Document) | 1d | 2025-07-21 | 2025-07-21 | 188 | 0d | Aunchala; Sutripat | 16h | 0% |
| 190 | 8.3 | ดำเนินการทดสอบ UAT และ Training | 6d | 2025-07-22 | 2025-07-29 | 189 | 0d | Aunchala; Sutripat | 96h | 0% |
| 191 | 8.4 | แก้ไข Defect จาก UAT | 2d | 2025-07-30 | 2025-07-31 | 190 | 0d | Aunchala; Sutripat | 32h | 0% |
| 192 | 8.5 | UAT Sign-off (Milestone #9) | 1d | 2025-08-01 | 2025-08-01 | 191 | 0d | Aunchala | 8h | 0% |
| 193 | 9 | **Deploy** | 3d | 2025-08-04 | 2025-08-06 |  | 0d |  | 24h | 0% |
| 194 | 9.1 | จัดทำแผน Go-Live Plan | 1d | 2025-08-04 | 2025-08-04 | 192 | 0d | Sutripat | 8h | 0% |
| 195 | 9.2 | ตรวจสอบความพร้อมในการ Go-Live (Go/No-Go Checklist) | 1d | 2025-08-05 | 2025-08-05 | 194 | 0d | Sutripat | 8h | 0% |
| 196 | 9.3 | ดำเนินการ Go-Live(Milestone #10) | 1d | 2025-08-06 | 2025-08-06 | 195 | 0d | Sutripat | 8h | 0% |
| 197 | 10 | **Stabilization** | 15d | 2025-08-07 | 2025-08-27 |  | 0d |  | 240h | 0% |
| 198 | 10.1 | สนับสนุนการใช้งาน หลัง Go-Live (หลังจบโครงการ 1 Month) | 15d | 2025-08-07 | 2025-08-27 | 196 | 0d | Sutripat | 120h | 0% |
| 199 | 10.2 | เก็บ Issues Log บน ระบบจริงที่ใช้งาน และแก้ไข | 15d | 2025-08-07 | 2025-08-27 | 198SS | 0d | Sutripat | 120h | 0% |
| 200 | 11 | **Project Closure** | 5d | 2025-08-28 | 2025-09-03 |  | 0d |  | 72h | 0% |
| 201 | 11.1 | จัดทำ Lesson Learned โครงการ | 1d | 2025-08-28 | 2025-08-28 | 199 | 0d | Tanchanok; Sutripat; Aunchala | 24h | 0% |
| 202 | 11.2 | ส่งมอบโครงการ สู่งานประจำ (Handover) | 1d | 2025-08-29 | 2025-08-29 | 201 | 0d | Sutripat | 8h | 0% |
| 203 | 11.3 | จัดเก็บเอกสาร Project Files ทั้งหมด | 1d | 2025-09-01 | 2025-09-01 | 202 | 0d | Aunchala; Sutripat | 16h | 0% |
| 204 | 11.4 | กำหนดระยะเวลาในการวัด Outcome ของโครงการ (Project KPI) | 1d | 2025-09-02 | 2025-09-02 | 203 | 0d | Aunchala; Sutripat | 16h | 0% |
| 205 | 11.5 | ดำเนินการปิดโครงการ (Milestone #11) | 1d | 2025-09-03 | 2025-09-03 | 204 | 0d | Sutripat | 8h | 0% |
